| id | order_no | name | business_unit | lot | capacity_kwp | installation_type | type_code | planned_start | planned_finish | actual_start | actual_progress_pct | planned_progress_pct | variance_pct | status | status_th | contractor | region | province | main_pm | s_curve | gps |
| --- | --- | --- | --- | --- | --- | --- | --- | --- | --- | --- | --- | --- | --- | --- | --- | --- | --- | --- | --- | --- | --- |
| prj_001 | 96 | ฟาร์มสุกรขุนเขาหินซ้อน | สุกรตะวันออก | CC | 57.2 | Solar Car park | 19.0 | 2025-11-01 | 2026-05-05 | 2025-08-10 | 13.0 | 100.0 | -87.0 | DELAYED | ล่าช้ากว่าแผน | ว่าง | ตะวันออก | ฉะเชิงเทรา | #N/A |       |  |
| prj_002 | 108 | ฟาร์มสุกรขุนพนัสนิคม | สุกรตะวันออก | CC | 157.3 | Solar Car park | 19.0 | 2025-11-01 | 2026-05-05 | 2025-08-10 | 13.0 | 100.0 | -87.0 | DELAYED | ล่าช้ากว่าแผน | MTT | ตะวันออก | ชลบุุรี | #N/A |       |  |
| prj_003 | 124 | ฟาร์มสุกรพันธุ์สระแก้ว | สุกรตะวันออก | CC | 157.3 | Solar Car park | 19.0 | 2025-11-01 | 2026-05-05 | 2025-08-10 | 13.0 | 100.0 | -87.0 | DELAYED | ล่าช้ากว่าแผน | MTt | ตะวันออก | สระแก้ว | #N/A |       |  |
| prj_004 | 186 | ฟาร์มกาญจนบุรี | สัตว์ปีก | CC | 214.5 | Solar Car park | 19.0 | 2025-08-17 | 2026-03-05 | 2025-08-10 | 8.0 | 100.0 | -92.0 | DELAYED | ล่าช้ากว่าแผน | AT | กลาง | กาญจนบุรี | #N/A |       |  |
| prj_005 | 113 | ฟาร์มสุกรขุนโคกมะตูม | สุกรตะวันออก | CC | 214.5 | Solar Car park | 20.0 | 2025-11-01 | 2026-05-05 | 2025-08-10 | 14.0 | 100.0 | -86.0 | DELAYED | ล่าช้ากว่าแผน | AT | ตะวันออก | สระแก้ว | #N/A |       |  |
| prj_006 | 107 | ฟาร์มสุกรท่าจาม | สุกรตะวันออก | CC | 214.5 | Solar Car park | 20.0 | 2025-11-20 | 2026-05-24 | 2025-08-10 | 16.5 | 100.0 | -83.5 | DELAYED | ล่าช้ากว่าแผน | MTT | ตะวันออก | ชลบุรี | #N/A |       |  |
| prj_007 | 76 | ฟาร์มสุกรบางหนาง (ระนอง) | สุกรใต้ | CC | 214.5 | Solar Car park | 20.0 | 2025-11-01 | 2026-05-05 | 2025-08-15 | 2.0 | 100.0 | -98.0 | DELAYED | ล่าช้ากว่าแผน | AT | ใต้ | ระนอง | #N/A |       |  |
| prj_008 | 20 | โรงงานไก่ย่างห้าดาวเชียงใหม่ | ไก่ย่างห้าดาว | CC | 214.5 | Solar Rooftop | 2.0 | 2024-02-05 | 2025-12-11 | 2025-08-10 | 7.0 | 100.0 | -93.0 | DELAYED | ล่าช้ากว่าแผน | 24X | เหนือ | เชียงใหม่ | cc |       |  |
| prj_009 | 214 | โรงงานข้าววังแดง-2 | โรงข้าว | CC | 214.5 | Solar Rooftop | 20.0 | 2026-03-01 | 2026-08-19 |  | 0.0 | 99.0 | -99.0 | DELAYED | ล่าช้ากว่าแผน |  |  |  |  |       |  |
| prj_010 | 145 | โรงชำแหละสุกรหนองคาย | ชำแหละสุกร | CC | 214.5 | Solar Car park | 20.0 | 2025-11-01 | 2026-05-05 | 2025-08-15 | 2.0 | 100.0 | -98.0 | DELAYED | ล่าช้ากว่าแผน | PPP | อีสาน | หนองคาย | CC |       |  |
| prj_011 | 216 | โรงฟักไข่กบินทร์บุรี3 | โรงฟัก | CC | 214.5 | Solar Car park | 19.0 | 2026-03-01 | 2026-08-19 |  | 0.0 | 100.0 | -100.0 | DELAYED | ล่าช้ากว่าแผน |  |  |  |  | 2026-02-23, 2026-03-02, 2026-03-09, 2026-03-16, 2026-03-23, 2026-03-30, 2026-04-06, 2026-04-13, 2026-04-20, 2026-04-27, 2026-05-04, 2026-05-11, 2026-05-18, 2026-05-25, 2026-06-01, 2026-06-08, 2026-06-15, 2026-06-22, 2026-06-29, 2026-07-06, 2026-07-13, 2026-07-20, 2026-07-27, 2026-08-03, 2026-08-10, 2026-08-17, 2026-08-24 W1 (23/02/26), W2 (02/03/26), W3 (09/03/26), W4 (16/03/26), W5 (23/03/26), W6 (30/03/26), W7 (06/04/26), W8 (13/04/26), W9 (20/04/26), W10 (27/04/26), W11 (04/05/26), W12 (11/05/26), W13 (18/05/26), W14 (25/05/26), W15 (01/06/26), W16 (08/06/26), W17 (15/06/26), W18 (22/06/26), W19 (29/06/26), W20 (06/07/26), W21 (13/07/26), W22 (20/07/26), W23 (27/07/26), W24 (03/08/26), W25 (10/08/26), W26 (17/08/26), W27 (24/08/26) 1.67, 5.6, 12.55, 19.47, 27.82, 35.37, 43.23, 61.28, 70.67, 80.07, 82.24, 86.89, 88.54, 90.19, 91.83, 94.3, 95.56, 96.81, 98.06, 99.32, 99.57, 99.83, 99.87, 99.91, 99.96, 100.0, 100.0 0.0, 0.0, 0.0, 0.0, 0.0, 0.0, 0.0, 0.0, 0.0, 0.0, 0.0, 0.0, 0.0, 0.0, 0.0, 0.0, 0.0, 0.0, 0.0, 0.0, 0.0, 0.0, 0.0, 0.0, 0.0, 0.0, 0.0 1.67, 3.93, 6.95, 6.92, 8.35, 7.55, 7.85, 18.05, 9.39, 9.39, 2.17, 4.65, 1.65, 1.65, 1.65, 2.47, 1.25, 1.25, 1.25, 1.25, 0.25, 0.25, 0.04, 0.04, 0.04, 0.04, 0.0 0.0, 0.0, 0.0, 0.0, 0.0, 0.0, 0.0, 0.0, 0.0, 0.0, 0.0, 0.0, 0.0, 0.0, 0.0, 0.0, 0.0, 0.0, 0.0, 0.0, 0.0, 0.0, 0.0, 0.0, 0.0, 0.0, 0.0 |  |
| prj_012 | 41 | ฟาร์มไก่รุ่นไข่ นาดี (ปราจีนบุรี) | สัตว์ปีก | CC | 314.6 | Solar Car park | 20.0 | 2025-09-17 | 2026-04-05 | 2025-08-10 | 8.0 | 100.0 | -92.0 | DELAYED | ล่าช้ากว่าแผน | ST | กลาง | ปราจีนบุรี | cc |       |  |
| prj_013 | 40 | ฟาร์มไก่รุ่นไข่ โพธิ์ประทับช้าง | สัตว์ปีก | CC | 314.6 | Solar Car park | 20.0 | 2025-09-17 | 2026-04-05 | 2025-08-10 | 7.0 | 100.0 | -93.0 | DELAYED | ล่าช้ากว่าแผน | Xin | เหนือ | พิจิตร | cc |       |  |
| prj_014 | 14 | โรงฟักไข่บ้านไร่ |  | CC | 321.2 | Solar Car park | 20.0 | 2026-05-01 | 2026-10-04 |  | 0.0 | 94.47 | -94.47 | DELAYED | ล่าช้ากว่าแผน |  |  |  |  |       |  |
| prj_015 | 202 | โรงงานอาหารสำเร็จรูปหนองจอก-2 | อสร. | CC | 514.8 | Solar Car park | 42.0 | 2025-09-10 | 2026-04-22 | 2025-05-06 | 17.0 | 97.6 | -80.6 | DELAYED | ล่าช้ากว่าแผน | Suzaku | ปริมลฑล | กทม. | CC |       | 17°53'23.2"N 103°32'14.5"E |
| prj_016 | 213 | โรงงานอาหาร แปรรูปเนื้อเป็ด-ไก่ บางนา | อสร | CC | 534.82 | Solar Rooftop | 20.0 | 2026-03-01 | 2026-08-19 |  | 7.48 | 100.0 | -92.52 | DELAYED | ล่าช้ากว่าแผน |  |  |  |  | 2026-02-23, 2026-03-02, 2026-03-09, 2026-03-16, 2026-03-23, 2026-03-30, 2026-04-06, 2026-04-13, 2026-04-20, 2026-04-27, 2026-05-04, 2026-05-11, 2026-05-18, 2026-05-25, 2026-06-01, 2026-06-08, 2026-06-15, 2026-06-22, 2026-06-29, 2026-07-06, 2026-07-13, 2026-07-20, 2026-07-27, 2026-08-03, 2026-08-10, 2026-08-17, 2026-08-24 W1 (23/02/26), W2 (02/03/26), W3 (09/03/26), W4 (16/03/26), W5 (23/03/26), W6 (30/03/26), W7 (06/04/26), W8 (13/04/26), W9 (20/04/26), W10 (27/04/26), W11 (04/05/26), W12 (11/05/26), W13 (18/05/26), W14 (25/05/26), W15 (01/06/26), W16 (08/06/26), W17 (15/06/26), W18 (22/06/26), W19 (29/06/26), W20 (06/07/26), W21 (13/07/26), W22 (20/07/26), W23 (27/07/26), W24 (03/08/26), W25 (10/08/26), W26 (17/08/26), W27 (24/08/26) 1.67, 5.6, 12.55, 19.41, 27.72, 35.29, 43.16, 61.23, 70.64, 80.06, 82.25, 86.92, 88.58, 90.25, 91.92, 94.4, 95.68, 96.95, 98.22, 99.42, 99.62, 99.83, 99.87, 99.91, 99.96, 100.0, 100.0 0.11, 0.32, 0.76, 1.23, 2.19, 3.04, 3.89, 5.11, 5.95, 6.8, 6.86, 6.96, 7.03, 7.09, 7.15, 7.27, 7.32, 7.38, 7.43, 7.49, 7.49, 7.5, 7.5, 7.5, 7.5, 7.5, 7.5 1.67, 3.93, 6.95, 6.87, 8.3, 7.57, 7.87, 18.07, 9.41, 9.41, 2.19, 4.67, 1.67, 1.67, 1.67, 2.49, 1.27, 1.27, 1.27, 1.2, 0.2, 0.2, 0.04, 0.04, 0.04, 0.04, 0.0 0.11, 0.2, 0.45, 0.47, 0.96, 0.85, 0.85, 1.22, 0.85, 0.85, 0.06, 0.1, 0.06, 0.06, 0.06, 0.11, 0.06, 0.06, 0.06, 0.06, 0.01, 0.01, 0.0, 0.0, 0.0, 0.0, 0.0 |  |
| prj_017 | 215 | โรงงานอาหารสำเร็จรูป สระบุรี | อสร | CC | 540.2 | Solar Car park | 20.0 | 2026-05-01 | 2026-10-04 | 2026-03-13 | 5.0 | 94.47 | -89.47 | DELAYED | ล่าช้ากว่าแผน |  |  |  |  |       |  |
| prj_018 | 18 | โรงงานอาหารสัตว์ท่าเรือ | อาหารสัตว์ | CC | 829.4 | Solar Car park | 41.0 | 2025-12-26 | 2026-09-19 |  | 0.0 | 99.47 | -99.47 | DELAYED | ล่าช้ากว่าแผน |  |  |  |  |       |  |
| prj_019 | 197 | โรงงานอาหารสัตว์หนองแค สระบุรี | อาหารสัตว์ | CC | 1742.0 | Solar Car park | 42.0 | 2025-12-26 | 2026-10-11 | 2025-03-03 | 5.0 | 99.08 | -94.08 | DELAYED | ล่าช้ากว่าแผน |  |  |  |  |       |  |
| prj_020 | 47 | โรงงานแปรรูปสัตว์น้ำ แกลง (ระยอง) 2 | แปรรูปสัตว์น้ำ | CC | 1859.0 | Solar Floating&Farm | 39.0 | 2025-07-01 | 2026-03-19 |  | 0.0 | 100.0 | -100.0 | DELAYED | ล่าช้ากว่าแผน | AT | ตะวันออก | ระยอง | Cc |       | 15.799015380236652, 100.71433357766949 |
| prj_021 | 212 | โรงงานข้าวนครหลวง-2 | โรงข้าว | CC | 2259.4 | Solar Rooftop | 24.0 | 2026-03-01 | 2026-07-20 |  | 0.0 | 93.0 | -93.0 | DELAYED | ล่าช้ากว่าแผน |  |  |  |  | 2026-02-23, 2026-03-02, 2026-03-09, 2026-03-16, 2026-03-23, 2026-03-30, 2026-04-06, 2026-04-13, 2026-04-20, 2026-04-27, 2026-05-04, 2026-05-11, 2026-05-18, 2026-05-25, 2026-06-01, 2026-06-08, 2026-06-15, 2026-06-22, 2026-06-29, 2026-07-06, 2026-07-13, 2026-07-20 W1 (23/02/26), W2 (02/03/26), W3 (09/03/26), W4 (16/03/26), W5 (23/03/26), W6 (30/03/26), W7 (06/04/26), W8 (13/04/26), W9 (20/04/26), W10 (27/04/26), W11 (04/05/26), W12 (11/05/26), W13 (18/05/26), W14 (25/05/26), W15 (01/06/26), W16 (08/06/26), W17 (15/06/26), W18 (22/06/26), W19 (29/06/26), W20 (06/07/26), W21 (13/07/26), W22 (20/07/26) 1.33, 4.63, 11.15, 18.12, 27.42, 33.73, 40.63, 56.74, 67.08, 77.43, 78.49, 81.73, 83.17, 84.61, 86.05, 88.37, 89.47, 90.58, 91.68, 92.79, 92.89, 93.0 0.0, 0.0, 0.0, 0.0, 0.0, 0.0, 0.0, 0.0, 0.0, 0.0, 0.0, 0.0, 0.0, 0.0, 0.0, 0.0, 0.0, 0.0, 0.0, 0.0, 0.0, 0.0 1.33, 3.3, 6.51, 6.97, 9.3, 6.3, 6.9, 16.1, 10.34, 10.34, 1.06, 3.24, 1.44, 1.44, 1.44, 2.32, 1.11, 1.11, 1.11, 1.11, 0.11, 0.11 0.0, 0.0, 0.0, 0.0, 0.0, 0.0, 0.0, 0.0, 0.0, 0.0, 0.0, 0.0, 0.0, 0.0, 0.0, 0.0, 0.0, 0.0, 0.0, 0.0, 0.0, 0.0 |  |
| prj_022 | 19 | โรงงานแปรรูปสัตว์น้ำ แกลง (ระยอง) 1 | แปรรูปสัตว์น้ำ | CC | 2559.7 | Solar Floating&Farm | 39.0 | 2025-09-15 | 2026-04-25 |  | 0.0 | 100.0 | -100.0 | DELAYED | ล่าช้ากว่าแผน |  |  |  |  |       |  |
| prj_023 | 103 | ฟาร์มสุกรพันธุ์ระยอง 1 | สุกรตะวันออก | CC | 157.3 | Solar Car park | 19.0 | 2026-07-01 | 2026-12-04 | 2025-08-10 | 20.0 | 64.91 | -44.91 | DELAYED | ล่าช้ากว่าแผน | MTT | ตะวันออก | ระยอง | FLAME |       |  |
| prj_024 | 22 | โรงงานชำแหละสุกร บางคล้า | ชำแหละสุกร | CC EPC | 1887.6 | Solar Floating | 18.0 | 2025-09-17 | 2026-04-29 |  | 0.0 | 99.0 | -99.0 | DELAYED | ล่าช้ากว่าแผน |  |  |  |  |       |  |
| prj_025 | 99 | โรงชำแหละสุกรปลวกแดง | ชำแหละสุกร | CC ไม่มีพื้นที่ | 57.2 | Solar Rooftop | 1.0 | 2025-08-10 | 2026-01-28 | 2025-08-10 | 10.0 | 92.0 | -82.0 | DELAYED | ล่าช้ากว่าแผน | MTT | ตะวันออก | ระยอง | CC | 2025-08-04, 2025-08-11, 2025-08-18, 2025-08-25, 2025-09-01, 2025-09-08, 2025-09-15, 2025-09-22, 2025-09-29, 2025-10-06, 2025-10-13, 2025-10-20, 2025-10-27, 2025-11-03, 2025-11-10, 2025-11-17, 2025-11-24, 2025-12-01, 2025-12-08, 2025-12-15, 2025-12-22, 2025-12-29, 2026-01-05, 2026-01-12, 2026-01-19, 2026-01-26, 2026-02-02 W1 (04/08/25), W2 (11/08/25), W3 (18/08/25), W4 (25/08/25), W5 (01/09/25), W6 (08/09/25), W7 (15/09/25), W8 (22/09/25), W9 (29/09/25), W10 (06/10/25), W11 (13/10/25), W12 (20/10/25), W13 (27/10/25), W14 (03/11/25), W15 (10/11/25), W16 (17/11/25), W17 (24/11/25), W18 (01/12/25), W19 (08/12/25), W20 (15/12/25), W21 (22/12/25), W22 (29/12/25), W23 (05/01/26), W24 (12/01/26), W25 (19/01/26), W26 (26/01/26), W27 (02/02/26) 2.58, 7.43, 16.43, 24.95, 33.56, 38.17, 43.08, 58.18, 66.63, 75.08, 76.47, 80.66, 82.14, 83.63, 85.12, 87.37, 88.47, 89.58, 90.68, 91.79, 91.89, 92.0, 92.0, 92.0, 92.0, 92.0, 92.0 0.35, 0.72, 1.09, 1.47, 1.84, 2.21, 2.58, 2.95, 3.32, 3.69, 4.06, 4.43, 4.8, 5.18, 5.55, 5.92, 6.29, 6.66, 7.03, 7.4, 7.77, 8.14, 8.52, 8.89, 9.26, 9.63, 10.0 2.58, 4.85, 8.99, 8.52, 8.61, 4.61, 4.91, 15.11, 8.45, 8.45, 1.39, 4.19, 1.49, 1.49, 1.49, 2.25, 1.11, 1.11, 1.11, 1.11, 0.11, 0.11, 0.0, 0.0, 0.0, 0.0, 0.0 0.35, 0.37, 0.37, 0.37, 0.37, 0.37, 0.37, 0.37, 0.37, 0.37, 0.37, 0.37, 0.37, 0.37, 0.37, 0.37, 0.37, 0.37, 0.37, 0.37, 0.37, 0.37, 0.37, 0.37, 0.37, 0.37, 0.37 |  |
| prj_026 | 106 | ฟาร์มสุกรพันธุ์ชลบุรี | สุกร | CC ไม่มีพื้นที่ | 214.5 | Solar Car park | 20.0 | 2025-08-20 | 2026-02-21 |  | 0.0 | 100.0 | -100.0 | DELAYED | ล่าช้ากว่าแผน | MTT | ตะวันออก | ชลบุรี | CC | 2025-08-18, 2025-08-25, 2025-09-01, 2025-09-08, 2025-09-15, 2025-09-22, 2025-09-29, 2025-10-06, 2025-10-13, 2025-10-20, 2025-10-27, 2025-11-03, 2025-11-10, 2025-11-17, 2025-11-24, 2025-12-01, 2025-12-08, 2025-12-15, 2025-12-22, 2025-12-29, 2026-01-05, 2026-01-12, 2026-01-19, 2026-01-26, 2026-02-02, 2026-02-09, 2026-02-16, 2026-02-23 W1 (18/08/25), W2 (25/08/25), W3 (01/09/25), W4 (08/09/25), W5 (15/09/25), W6 (22/09/25), W7 (29/09/25), W8 (06/10/25), W9 (13/10/25), W10 (20/10/25), W11 (27/10/25), W12 (03/11/25), W13 (10/11/25), W14 (17/11/25), W15 (24/11/25), W16 (01/12/25), W17 (08/12/25), W18 (15/12/25), W19 (22/12/25), W20 (29/12/25), W21 (05/01/26), W22 (12/01/26), W23 (19/01/26), W24 (26/01/26), W25 (02/02/26), W26 (09/02/26), W27 (16/02/26), W28 (23/02/26) 1.78, 5.52, 12.84, 19.91, 30.11, 37.61, 48.41, 62.65, 74.19, 79.5, 84.3, 86.4, 87.9, 89.4, 91.62, 92.83, 93.83, 94.83, 96.23, 97.63, 98.2, 98.77, 99.33, 99.5, 99.67, 99.83, 100.0, 100.0 0.0, 0.0, 0.0, 0.0, 0.0, 0.0, 0.0, 0.0, 0.0, 0.0, 0.0, 0.0, 0.0, 0.0, 0.0, 0.0, 0.0, 0.0, 0.0, 0.0, 0.0, 0.0, 0.0, 0.0, 0.0, 0.0, 0.0, 0.0 1.78, 3.74, 7.32, 7.07, 10.2, 7.5, 10.8, 14.24, 11.54, 5.32, 4.8, 2.1, 1.5, 1.5, 2.21, 1.21, 1.0, 1.0, 1.4, 1.4, 0.57, 0.57, 0.57, 0.17, 0.17, 0.17, 0.17, 0.0 0.0, 0.0, 0.0, 0.0, 0.0, 0.0, 0.0, 0.0, 0.0, 0.0, 0.0, 0.0, 0.0, 0.0, 0.0, 0.0, 0.0, 0.0, 0.0, 0.0, 0.0, 0.0, 0.0, 0.0, 0.0, 0.0, 0.0, 0.0 |  |
| prj_027 | 71 | ฟาร์มสุกรพันธุ์รัตภูมิ 2 | สุกร | CC ไม่มีพื้นที่ | 214.5 | Solar Car park | 20.0 | 2025-04-02 | 2026-04-05 |  | 0.0 | 100.0 | -100.0 | DELAYED | ล่าช้ากว่าแผน | Xin | ใต้ | สงขลา | CC |       |  |
| prj_028 | 128 | โรงชำแหละสุกรจอหอ | ชำแหละสุกร | CC ไม่มีพื้นที่ | 214.5 | Solar Rooftop | 2.0 | 2025-04-02 | 2026-04-05 |  | 0.0 | 100.0 | -100.0 | DELAYED | ล่าช้ากว่าแผน |  |  |  |  |       |  |
| prj_029 | 146 | โรงชำแหละสุกรหนองบัวลำภู | ชำแหละสุกร | CC ไม่มีพื้นที่ | 214.5 | Solar Rooftop | 2.0 | 2025-04-02 | 2026-04-05 |  | 0.0 | 100.0 | -100.0 | DELAYED | ล่าช้ากว่าแผน | PPP | อีสาน | หนองบัวลำภู | CC |       |  |
| prj_030 | 55 | ฟาร์มบ้านม่วง | สุกร | CC ไม่มีพื้นที่ | 314.6 | Solar Car park | 20.0 | 2025-12-01 | 2026-06-04 | 2025-06-18 | 20.6 | 100.0 | -79.4 | DELAYED | ล่าช้ากว่าแผน | PPP | อีสาน | สกลนคร |  |       | 17.88832026243771, 103.53615989256669 |
| prj_031 | 148 | ฟาร์มสุกรพระยืน | สุกร | CC ไม่มีพื้นที่ | 314.6 | Solar Car park | 20.0 | 2025-10-20 | 2026-04-23 | 2025-08-15 | 1.0 | 100.0 | -99.0 | DELAYED | ล่าช้ากว่าแผน | PPP | อีสาน | ขอนแก่น | CC |       |  |
| prj_032 | 181 | โรงงานชำแหละ จันทบุรี (นายายอาม) | ชำแหละสุกร | CC ไม่มีพื้นที่ | 314.6 | Solar Floating | 17.0 | 2025-11-01 | 2026-05-05 | 2025-08-10 | 10.5 | 100.0 | -89.5 | DELAYED | ล่าช้ากว่าแผน | ว่าง | ตะวันออก | จันทบุรี | CC |       |  |
| prj_033 | 153 | ฟาร์มหนองคาย | สุกร | CC ไม่มีพื้นที่ | 371.8 | Solar Car park | 20.0 | 2025-09-01 | 2026-03-05 |  | 0.0 | 94.5 | -94.5 | DELAYED | ล่าช้ากว่าแผน |  |  |  |  |       |  |
| prj_034 | 200 | CEE-2 | CEE | Demo lot1 | 62.92 | Solar Rooftop | 20.0 | 2025-05-20 | 2026-01-25 | 2025-06-06 | 87.1 | 100.0 | -12.9 | DELAYED | ล่าช้ากว่าแผน | AT | ปริมลฑล | กทม. | FLAME |       | 15.825743272501292, 101.8772967276296 |
| prj_035 | 199 | โรงงานอาหารแปรรูปมีนบุรี2 | แปรรูป | Demo lot1 | 870.87 | Solar Rooftop | 2.0 | 2025-07-01 | 2026-02-08 | 2025-06-06 | 89.1 | 100.0 | -10.9 | DELAYED | ล่าช้ากว่าแผน | Suzaku | ปริมลฑล | กทม. | FLAME |       | 16.031962318650844, 101.06856848735104 |
| prj_036 | 27 | โรงงานอาหารสำเร็จรูป มหาชัย | อสร. | Demo lot1 | 1481.48 | Solar Rooftop | 24.0 | 2025-05-20 | 2025-12-07 | 2025-05-06 | 89.0 | 100.0 | -11.0 | DELAYED | ล่าช้ากว่าแผน | Suzaku | ปริมลฑล | สมุทรสาคร | Gno |       | 17.524011404839538, 99.82438249369598 |
| prj_037 | 149 | ฟาร์มท่าจะหลุง | สุกร | LOT AG | 57.2 | Solar Car park | 19.0 | 2026-01-15 | 2026-07-05 | 2025-07-03 | 85.3 | 100.0 | -14.7 | DELAYED | ล่าช้ากว่าแผน | WER | โคราช | นครราชสีมา | Boss |       |  |
| prj_038 | 10 | ฟาร์มไก่พันธุ์ กุดจิก | สัตว์ปีก | LOT AG | 157.3 | Solar Car park | 19.0 | 2025-10-15 | 2026-04-11 | 15//8/2025 | 91.6 | 100.0 | -8.4 | SLIGHT_DELAY | ล่าช้าเล็กน้อย | WER | โคราช | นครราชสีมา | Boss |       |  |
| prj_039 | 6 | ฟาร์มไก่พันธุ์ เกษมทรัพย์1 | สัตว์ปีก | LOT AG | 157.3 | Solar Car park | 19.0 | 2025-10-15 | 2026-04-04 | 2025-06-18 | 87.1 | 100.0 | -12.9 | DELAYED | ล่าช้ากว่าแผน | TBB | โคราช | นครราชสีมา | Boss |       |  |
| prj_040 | 7 | ฟาร์มไก่พันธุ์ เกษมทรัพย์2 | สัตว์ปีก | LOT AG | 157.3 | Solar Car park | 19.0 | 2025-10-07 | 2026-04-03 | 2025-06-18 | 92.5 | 100.0 | -7.5 | SLIGHT_DELAY | ล่าช้าเล็กน้อย | TBB | โคราช | นครราชสีมา | Boss |       | 14.625687693516003, 101.88957168760165 |
| prj_041 | 1 | ฟาร์มไก่พันธุ์ โกรกหว้า1 | สัตว์ปีก | LOT AG | 157.3 | Solar Car park | 19.0 | 2025-10-01 | 2026-04-04 | 2025-05-07 | 92.05 | 100.0 | -7.95 | SLIGHT_DELAY | ล่าช้าเล็กน้อย | TM | โคราช | นครราชสีมา | Boss |       | 14.666438239350963, 102.10863685186855 |
| prj_042 | 8 | ฟาร์มไก่พันธุ์ โกรกหว้า2 | สัตว์ปีก | LOT AG | 157.3 | Solar Car park | 19.0 | 2025-10-10 | 2026-04-06 | 2025-05-31 | 92.05 | 100.0 | -7.95 | SLIGHT_DELAY | ล่าช้าเล็กน้อย | TM | โคราช | นครราชสีมา | Boss |       | 14.658275610859087, 102.11330078870155 |
| prj_043 | 9 | ฟาร์มไก่พันธุ์ โกรกหว้า3 | สัตว์ปีก | LOT AG | 157.3 | Solar Car park | 19.0 | 2025-10-15 | 2026-05-05 | 2025-06-18 | 91.15 | 100.0 | -8.85 | SLIGHT_DELAY | ล่าช้าเล็กน้อย | TM | โคราช | นครราชสีมา | Boss |       |  |
| prj_044 | 2 | ฟาร์มไก่พันธุ์ โกรกหว้า4 | สัตว์ปีก | LOT AG | 157.3 | Solar Car park | 19.0 | 2026-03-01 | 2026-08-19 | 2025-07-11 | 85.2 | 100.0 | -14.8 | DELAYED | ล่าช้ากว่าแผน |  |  |  |  |       |  |
| prj_045 | 11 | ฟาร์มไก่พันธุ์ ธนัฐบดี | สัตว์ปีก | LOT AG | 157.3 | Solar Car park | 19.0 | 2026-07-01 | 2026-11-19 | 2025-07-12 | 26.38 | 81.51 | -55.13 | DELAYED | ล่าช้ากว่าแผน |  |  |  |  |       |  |
| prj_046 | 15 | ฟาร์มไก่พันธุ์ พรหมราช6 | สัตว์ปีก | LOT AG | 157.3 | Solar Car park | 19.0 | 2025-10-15 | 2026-04-11 | 2025-06-18 | 91.6 | 100.0 | -8.4 | SLIGHT_DELAY | ล่าช้าเล็กน้อย | TM | โคราช | นครราชสีมา | Boss |       |  |
| prj_047 | 3 | ฟาร์มไก่พันธุ์ พรหมราช7 | สัตว์ปีก | LOT AG | 157.3 | Solar Car park | 19.0 | 2025-10-15 | 2026-04-04 | 2025-06-18 | 91.6 | 100.0 | -8.4 | SLIGHT_DELAY | ล่าช้าเล็กน้อย | Xin | โคราช | นครราชสีมา | Boss |       | 14.676990210627611, 101.94987148738655 |
| prj_048 | 193 | ฟาร์มไก่พันธุ์ ลาดบัวขาว1 | สัตว์ปีก | LOT AG | 157.3 | Solar Car park | 19.0 | 2025-07-20 | 2026-01-07 | 2025-06-18 | 89.5 | 100.0 | -10.5 | DELAYED | ล่าช้ากว่าแผน | ST | โคราช | นครราชสีมา | Boss |       | 14.876272350470016, 101.6402217551868 |
| prj_049 | 4 | ฟาร์มไก่พันธุ์ ลาดบัวขาว2 | สัตว์ปีก | LOT AG | 157.3 | Solar Car park | 19.0 | 2026-01-17 | 2026-07-07 | 2025-07-11 | 83.7 | 100.0 | -16.3 | DELAYED | ล่าช้ากว่าแผน | ST | โคราช | นครราชสีมา | Boss |       |  |
| prj_050 | 17 | ฟาร์มไก่พันธุ์ อุดมทรัพย์ | สัตว์ปีก | LOT AG | 157.3 | Solar Car park | 19.0 | 2025-09-01 | 2026-02-26 | 2025-06-18 | 90.5 | 100.0 | -9.5 | SLIGHT_DELAY | ล่าช้าเล็กน้อย | PPP | โคราช | นครราชสีมา | Boss |       | 14.551599150020309, 101.9560521737568 |
| prj_051 | 126 | ฟาร์มสุกรพันธุ์ชุมพวง | สุกร | LOT AG | 157.3 | Solar Car park | 19.0 | 2025-10-15 | 2026-04-04 | 2025-07-23 | 87.1 | 100.0 | -12.9 | DELAYED | ล่าช้ากว่าแผน | WER | โคราช | นครราชสีมา | Boss |       |  |
| prj_052 | 12 | ฟาร์มไก่พันธุ์ ปักธงชัย1 | สัตว์ปีก | LOT AG | 214.5 | Solar Car park | 19.0 | 2025-10-15 | 2026-04-11 | 2025-06-18 | 87.1 | 100.0 | -12.9 | DELAYED | ล่าช้ากว่าแผน | TM | โคราช | นครราชสีมา | Boss |       |  |
| prj_053 | 5 | ฟาร์มไก่พันธุ์ วังโรงใหญ่ | สัตว์ปีก | LOT AG | 214.5 | Solar Car park | 19.0 | 2025-07-20 | 2026-01-14 | 2025-06-18 | 90.5 | 100.0 | -9.5 | SLIGHT_DELAY | ล่าช้าเล็กน้อย | Xin | โคราช | นครราชสีมา | Boss |       | 13.821329118542431, 101.69441638149347 |
| prj_054 | 127 | ฟาร์มสุกรพันธุ์โชคชัย | สุกร | LOT AG | 214.5 | Solar Car park | 19.0 | 2025-10-15 | 2026-04-04 | 2025-07-23 | 88.6 | 100.0 | -11.4 | DELAYED | ล่าช้ากว่าแผน | TM | โคราช | นครราชสีมา | Boss |       |  |
| prj_055 | 16 | ฟาร์มไก่พันธุ์ สีคิ้ว | สัตว์ปีก | LOT AG | 314.6 | Solar Farm | 7.0 | 2025-07-20 | 2026-01-14 | 2025-06-18 | 91.5 | 100.0 | -8.5 | SLIGHT_DELAY | ล่าช้าเล็กน้อย | PPP | โคราช | นครราชสีมา | Boss |       | 14.842449156757343, 101.61925166517646 |
| prj_056 | 21 | โรงงานไก่ย่างห้าดาวโคราช (กำลังก่อสร้าง)-2567 | ไก่ย่างห้าดาว | LOT AG | 451.88 | Solar roof&Car Park | 2.0 | 2025-07-01 | 2025-12-19 | 2025-06-09 | 90.5 | 100.0 | -9.5 | SLIGHT_DELAY | ล่าช้าเล็กน้อย | ST | โคราช | นครราชสีมา | M |       | 15.312076900411911, 100.63066697849715 |
| prj_057 | 188 | โรงงานแปรรูปเนื้อไก่โคราช3 | แปรรูป | LOT AG | 2171.02 | Solar Car park | 42.0 | 2026-07-01 | 2027-03-27 | 2025-07-13 | 13.0 | 28.42 | -15.42 | DELAYED | ล่าช้ากว่าแผน |  |  |  |  |       |  |
| prj_058 | 45 | ฟาร์มปู่ย่าพันธุ์ ชัยภูมิ5 | สัตว์ปีก | lot1 | 57.2 | Solar Car park | 19.0 | 2025-07-20 | 2026-01-07 | 2025-06-19 | 93.5 | 100.0 | -6.5 | SLIGHT_DELAY | ล่าช้าเล็กน้อย | Xin | อีสาน | ชัยภูมิ | ICE |       | 14.55161198367762, 101.95599964400067 |
| prj_059 | 70 | ฟาร์มสุกรพันธุ์รัตภูมิ 1 | สุกร | lot1 | 57.2 | Solar Car park | 19.0 | 2025-08-01 | 2026-01-19 | 2025-06-18 | 90.0 | 100.0 | -10.0 | SLIGHT_DELAY | ล่าช้าเล็กน้อย | Xin | ใต้ | สงขลา | Pun |       | 7.050216497596977, 100.22792894609123 |
| prj_060 | 36 | ฟาร์มไก่พันธุ์แสงทอง | สัตว์ปีก | lot1 | 157.3 | Solar Car park | 19.0 | 2025-07-20 | 2026-01-14 | 2025-06-18 | 93.5 | 100.0 | -6.5 | SLIGHT_DELAY | ล่าช้าเล็กน้อย | TBB | อีสาน | เพชรบูรณ์ | ICE |       | 14.82831902515646, 100.82626199360942 |
| prj_061 | 42 | ฟาร์มปู่ย่าพันธุ์ เขาตําบล | สัตว์ปีก | lot1 | 157.3 | Solar Car park | 19.0 | 2025-07-20 | 2026-01-07 | 2025-06-18 | 88.0 | 100.0 | -12.0 | DELAYED | ล่าช้ากว่าแผน | WER | กลาง | ลพบุรี | ICE |       | 15.240088002324487, 101.27149700199612 |
| prj_062 | 85 | ฟาร์มสุกรพันธุ์บ่อทอง | สุกร | lot1 | 157.3 | Solar Car park | 19.0 | 2025-08-10 | 2025-12-29 | 2025-06-18 | 88.0 | 100.0 | -12.0 | DELAYED | ล่าช้ากว่าแผน | Suzaku | กลาง | ลพบุรี | ICE | 2025-06-16, 2025-06-23, 2025-06-30, 2025-07-07, 2025-07-14, 2025-07-21, 2025-07-28, 2025-08-04, 2025-08-11, 2025-08-18, 2025-08-25, 2025-09-01, 2025-09-08, 2025-09-15, 2025-09-22, 2025-09-29, 2025-10-06, 2025-10-13, 2025-10-20, 2025-10-27, 2025-11-03, 2025-11-10, 2025-11-17, 2025-11-24, 2025-12-01, 2025-12-08, 2025-12-15, 2025-12-22, 2025-12-29 W1 (16/06/25), W2 (23/06/25), W3 (30/06/25), W4 (07/07/25), W5 (14/07/25), W6 (21/07/25), W7 (28/07/25), W8 (04/08/25), W9 (11/08/25), W10 (18/08/25), W11 (25/08/25), W12 (01/09/25), W13 (08/09/25), W14 (15/09/25), W15 (22/09/25), W16 (29/09/25), W17 (06/10/25), W18 (13/10/25), W19 (20/10/25), W20 (27/10/25), W21 (03/11/25), W22 (10/11/25), W23 (17/11/25), W24 (24/11/25), W25 (01/12/25), W26 (08/12/25), W27 (15/12/25), W28 (22/12/25), W29 (29/12/25) 0.0, 0.0, 0.0, 0.0, 0.0, 0.0, 0.0, 1.67, 5.6, 12.55, 19.59, 28.07, 35.74, 43.72, 61.9, 71.41, 80.76, 82.89, 87.5, 89.1, 90.71, 92.31, 94.74, 95.95, 97.16, 98.37, 99.58, 99.79, 100.0 0.4, 0.8, 1.26, 8.38, 15.5, 17.22, 18.28, 19.33, 20.39, 21.44, 22.5, 28.96, 35.53, 42.56, 50.18, 58.29, 67.59, 69.48, 71.36, 75.5, 83.56, 84.11, 84.67, 85.22, 85.78, 86.33, 86.89, 87.44, 88.0 0.0, 0.0, 0.0, 0.0, 0.0, 0.0, 0.0, 1.67, 3.93, 6.95, 7.04, 8.48, 7.68, 7.98, 18.18, 9.52, 9.35, 2.13, 4.6, 1.6, 1.6, 1.6, 2.42, 1.21, 1.21, 1.21, 1.21, 0.21, 0.21 0.4, 0.4, 0.46, 7.12, 7.12, 1.72, 1.06, 1.06, 1.06, 1.06, 1.06, 6.46, 6.58, 7.03, 7.63, 8.11, 9.31, 1.89, 1.89, 4.14, 8.06, 0.56, 0.56, 0.56, 0.56, 0.56, 0.56, 0.56, 0.56 | 15.312083045981407, 100.63063474341261 |
| prj_063 | 82 | ฟาร์มสุกรพันธุ์สุพรรณบุรี | สุกร | lot1 | 157.3 | Solar Car park | 19.0 | 2025-08-10 | 2026-02-04 | 2025-06-18 | 89.0 | 100.0 | -11.0 | DELAYED | ล่าช้ากว่าแผน | 24X | กลาง | สุพรรณบุรี | Gno |       | 14.382811846432151, 99.83090389149609 |
| prj_064 | 86 | ฟาร์มสุกรขุนโคกตูม | สุกร | lot1 | 214.5 | Solar Car park | 19.0 | 2025-08-10 | 2026-01-28 | 2025-06-18 | 88.0 | 100.0 | -12.0 | DELAYED | ล่าช้ากว่าแผน | WER | กลาง | ลพบุรี | ICE |       | 14.828654891383337, 100.82457972089833 |
| prj_065 | 84 | ฟาร์มสุกรพันธุ์นครนายก | สุกร | lot1 | 214.5 | Solar Car park | 19.0 | 2025-08-10 | 2026-01-28 | 2025-06-18 | 88.0 | 100.0 | -12.0 | DELAYED | ล่าช้ากว่าแผน | AT | ตะวันออก | นครนายก | Flame |       | 14.247564966243178, 100.98767817239869 |
| prj_066 | 52 | ฟาร์มหนองบัว | สุกร | lot1 | 214.5 | Solar Car park | 19.0 | 2025-08-01 | 2026-01-26 | 2025-06-18 | 89.5 | 100.0 | -10.5 | DELAYED | ล่าช้ากว่าแผน | 24X | เหนือ | นครสวรรค์ | Gno |       | 15.799079644505765, 100.71446966105385 |
| prj_067 | 69 | ฟาร์มสุกรพันธุ์ป่าบอน 1 | สุกร | lot1 | 314.6 | Solar Car park | 20.0 | 2025-08-01 | 2025-12-20 | 2025-06-18 | 89.25 | 100.0 | -10.75 | DELAYED | ล่าช้ากว่าแผน | Suzaku | ใต้ | พัทลุง | Pun |       | 7.313455695913819, 100.15013810626391 |
| prj_068 | 65 | ฟาร์มสุกรสุโขทัย | สุกร | lot1 | 314.6 | Solar Car park | 20.0 | 2025-07-20 | 2025-12-08 | 2025-06-18 | 88.0 | 100.0 | -12.0 | DELAYED | ล่าช้ากว่าแผน | 24X | เหนือ | สุโขทัย | Gno | 2025-06-16, 2025-06-23, 2025-06-30, 2025-07-07, 2025-07-14, 2025-07-21, 2025-07-28, 2025-08-04, 2025-08-11, 2025-08-18, 2025-08-25, 2025-09-01, 2025-09-08, 2025-09-15, 2025-09-22, 2025-09-29, 2025-10-06, 2025-10-13, 2025-10-20, 2025-10-27, 2025-11-03, 2025-11-10, 2025-11-17, 2025-11-24, 2025-12-01, 2025-12-08 W1 (16/06/25), W2 (23/06/25), W3 (30/06/25), W4 (07/07/25), W5 (14/07/25), W6 (21/07/25), W7 (28/07/25), W8 (04/08/25), W9 (11/08/25), W10 (18/08/25), W11 (25/08/25), W12 (01/09/25), W13 (08/09/25), W14 (15/09/25), W15 (22/09/25), W16 (29/09/25), W17 (06/10/25), W18 (13/10/25), W19 (20/10/25), W20 (27/10/25), W21 (03/11/25), W22 (10/11/25), W23 (17/11/25), W24 (24/11/25), W25 (01/12/25), W26 (08/12/25) 0.0, 0.0, 0.0, 0.0, 1.67, 5.6, 12.55, 19.54, 27.96, 35.66, 43.65, 61.85, 71.38, 80.75, 82.9, 87.52, 89.15, 90.77, 92.39, 94.84, 96.07, 97.3, 98.53, 99.68, 99.84, 100.0 0.5, 1.0, 1.56, 8.79, 15.52, 17.85, 19.69, 20.94, 22.18, 24.92, 33.12, 40.32, 47.67, 51.32, 56.33, 63.37, 72.34, 76.85, 80.11, 83.37, 85.44, 85.95, 86.46, 86.97, 87.49, 88.0 0.0, 0.0, 0.0, 0.0, 1.67, 3.93, 6.95, 6.99, 8.42, 7.7, 8.0, 18.2, 9.54, 9.37, 2.15, 4.62, 1.62, 1.62, 1.62, 2.44, 1.23, 1.23, 1.23, 1.16, 0.16, 0.16 0.5, 0.5, 0.56, 7.23, 6.73, 2.33, 1.84, 1.24, 1.24, 2.74, 8.2, 7.2, 7.35, 3.65, 5.01, 7.05, 8.97, 4.51, 3.26, 3.26, 2.07, 0.51, 0.51, 0.51, 0.51, 0.51 | 17.523895849431636, 99.82430423372739 |
| prj_069 | 61 | ฟาร์มสุกรพันธุ์พิษณุโลก 1 | สุกร | lot1 | 371.8 | Solar Car park | 41.0 | 2025-07-20 | 2025-12-08 | 2025-06-18 | 88.0 | 100.0 | -12.0 | DELAYED | ล่าช้ากว่าแผน | 24X | เหนือ | พิษณุโลก | Gno |       | 17.2028266866002, 100.26346154581609 |
| prj_070 | 119 | ฟาร์มสุกรลาดตะเคียน | สุกร | lot1 | 471.9 | Solar Car park | 41.0 | 2025-07-20 | 2025-12-08 | 2025-06-18 | 89.0 | 100.0 | -11.0 | DELAYED | ล่าช้ากว่าแผน | CWE | ตะวันออก | ปราจีนบุรี | Flame |       | 13.778819069929096, 101.69295899798756 |

| id | order_no | name | business_unit | lot | capacity_kwp | installation_type | type_code | planned_start | planned_finish | actual_start | actual_progress_pct | planned_progress_pct | variance_pct | status | status_th | contractor | region | province | main_pm | s_curve | gps |
| --- | --- | --- | --- | --- | --- | --- | --- | --- | --- | --- | --- | --- | --- | --- | --- | --- | --- | --- | --- | --- | --- |
| prj_071 | 43 | ฟาร์มปู่ย่าพันธุ์ โคกตูม | สัตว์ปีก | lot2 | 57.2 | Solar Car park | 19.0 | 2025-10-15 | 2026-04-04 | 2025-07-01 | 87.1 | 100.0 | -12.9 | DELAYED | ล่าช้ากว่าแผน | ST | กลาง | ลพบุรี | ICE |       |  |
| prj_072 | 28 | ฟาร์มเป็ดพันธุ์บัวชุม | สัตว์ปีก | lot2 | 57.2 | Solar Car park | 19.0 | 2025-10-15 | 2026-03-05 | 2025-06-21 | 91.1 | 100.0 | -8.9 | SLIGHT_DELAY | ล่าช้าเล็กน้อย | ST | กลาง | ลพบุรี | ICE |       |  |
| prj_073 | 80 | ฟาร์มสุกรขุนนพรัตน์ | สุกร | lot2 | 57.2 | Solar Car park | 19.0 | 2025-10-15 | 2026-04-04 | 2025-07-02 | 87.1 | 100.0 | -12.9 | DELAYED | ล่าช้ากว่าแผน | ST | กลาง | สุพรรณบุรี | Gno |       |  |
| prj_074 | 37 | ฟาร์มไก่พันธุ์พรหมยาม | สัตว์ปีก | lot2 | 157.3 | Solar Car park | 19.0 | 2025-10-15 | 2026-03-05 | 2025-07-01 | 87.1 | 100.0 | -12.9 | DELAYED | ล่าช้ากว่าแผน | TBB | อีสาน | เพชรบูรณ์ | ICE |       |  |
| prj_075 | 39 | ฟาร์มไก่พันธุ์สระแก้ว | สัตว์ปีก | lot2 | 157.3 | Solar Car park | 19.0 | 2025-10-15 | 2026-04-11 | 2025-07-01 | 87.6 | 100.0 | -12.4 | DELAYED | ล่าช้ากว่าแผน | MTT | ตะวันออก | สระแก้ว | Flame |       |  |
| prj_076 | 30 | ฟาร์มเป็ดพันธุ์วังม่วง | สัตว์ปีก | lot2 | 157.3 | Solar Car park | 19.0 | 2025-10-15 | 2026-04-11 | 2025-08-02 | 91.1 | 100.0 | -8.9 | SLIGHT_DELAY | ล่าช้าเล็กน้อย | ST | กลาง | สระบุรี | ICE |       |  |
| prj_077 | 95 | ฟาร์มสุกรขุนปรานบุรี 2 | สุกร | lot2 | 157.3 | Solar Car park | 19.0 | 2025-10-15 | 2026-04-04 | 2025-08-04 | 87.1 | 100.0 | -12.9 | DELAYED | ล่าช้ากว่าแผน | MTT | ใต้ | ประจวบคีรีขันค์ | Pun |       |  |
| prj_078 | 87 | ฟาร์มสุกรพันธุ์บ้านหมี่ | สุกร | lot2 | 157.3 | Solar Car park | 19.0 | 2025-10-15 | 2026-04-04 | 2025-08-03 | 87.1 | 100.0 | -12.9 | DELAYED | ล่าช้ากว่าแผน | TBB | กลาง | ลพบุรี | ICE |       |  |
| prj_079 | 130 | ฟาร์มสุกรพันธุ์บุรีรัมย์ | สุกร | lot2 | 157.3 | Solar Car park | 19.0 | 2025-10-15 | 2026-04-04 |  | 87.1 | 100.0 | -12.9 | DELAYED | ล่าช้ากว่าแผน |  |  |  |  |       |  |
| prj_080 | 35 | ฟาร์มไก่พันธุ์ลาดตะเคียน1 | สัตว์ปีก | lot2 | 214.5 | Solar Car park | 19.0 | 2025-10-15 | 2026-04-04 | 2025-07-18 | 89.5 | 100.0 | -10.5 | DELAYED | ล่าช้ากว่าแผน | CWE | กลาง | ปราจีนบุรี | Flame |       |  |
| prj_081 | 53 | ฟาร์มพะเยา | สุกร | lot2 | 214.5 | Solar Car park | 19.0 | 2025-10-15 | 2026-04-11 | 2025-08-01 | 87.1 | 100.0 | -12.9 | DELAYED | ล่าช้ากว่าแผน | 24X | เหนือ | พะเยา | Gno |       |  |
| prj_082 | 168 | ฟาร์มสุกรขุนไร่สาม | สุกร | lot2 | 214.5 | Solar Car park | 19.0 | 2025-10-15 | 2026-04-11 | 2025-08-15 | 84.9 | 100.0 | -15.1 | DELAYED | ล่าช้ากว่าแผน | PFE | ตะวันออก | ชลบุรี | Flame |       |  |
| prj_083 | 89 | ฟาร์มสุกรพระพุทธบาท | สุกร | lot2 | 214.5 | Solar Car park | 19.0 | 2025-10-15 | 2026-04-04 | 2025-01-30 | 87.1 | 100.0 | -12.9 | DELAYED | ล่าช้ากว่าแผน | ST | กลาง | สระบุรี | ICE |       |  |
| prj_084 | 94 | ฟาร์มสุกรพันธุ์บ่อพลอย | สุกร | lot2 | 214.5 | Solar Car park | 19.0 | 2025-10-15 | 2026-04-04 | 2025-08-10 | 87.1 | 100.0 | -12.9 | DELAYED | ล่าช้ากว่าแผน | AT | กลาง | กาญจนบุรี | Pun |       |  |
| prj_085 | 135 | ฟาร์มสุกรพันธุ์ยโสธร | สุกร | lot2 | 214.5 | Solar Car park | 19.0 | 2025-10-15 | 2026-04-04 |  | 84.55 | 100.0 | -15.45 | DELAYED | ล่าช้ากว่าแผน |  |  |  |  |       |  |
| prj_086 | 134 | ฟาร์มสุกรพันธุ์สุรินทร์ | สุกร | lot2 | 214.5 | Solar Car park | 19.0 | 2025-10-15 | 2026-04-04 |  | 87.1 | 100.0 | -12.9 | DELAYED | ล่าช้ากว่าแผน |  |  |  |  |       |  |
| prj_087 | 54 | ฟาร์มเขาสมโภชน์ | สุกร | lot2 | 314.6 | Solar Car park | 20.0 | 2025-10-15 | 2026-03-05 | 2025-08-02 | 87.1 | 100.0 | -12.9 | DELAYED | ล่าช้ากว่าแผน | Xin | กลาง | ลพบุรี | ICE |       |  |
| prj_088 | 114 | ฟาร์มสุกรพันธุ์โคกอุดม | สุกร | lot2 | 314.6 | Solar Car park | 41.0 | 2025-10-15 | 2026-03-05 | 2025-08-02 | 87.1 | 100.0 | -12.9 | DELAYED | ล่าช้ากว่าแผน | WER | ตะวันออก | ปราจีนบุรี | Flame |       |  |
| prj_089 | 93 | ฟาร์มสุกรพันธุ์ราชบุรี | สุกร | lot2 | 314.6 | Solar Car park | 20.0 | 2025-10-15 | 2026-03-05 | 2025-08-10 | 87.1 | 100.0 | -12.9 | DELAYED | ล่าช้ากว่าแผน | MTT | กลาง | ราชบุรี | Pun |       |  |
| prj_090 | 132 | ฟาร์มสุกรพันธุ์อำนาจเจริญ | สุกร | lot2 | 314.6 | Solar Car park | 20.0 | 2025-10-15 | 2026-03-05 |  | 86.65 | 100.0 | -13.35 | DELAYED | ล่าช้ากว่าแผน |  |  |  |  |       |  |
| prj_091 | 81 | ฟาร์มสุกรอู่ทอง | สุกร | lot2 | 314.6 | Solar Car park | 20.0 | 2025-10-15 | 2026-03-05 | 2025-08-10 | 87.1 | 100.0 | -12.9 | DELAYED | ล่าช้ากว่าแผน | AT | กลาง | สุพรรณบุรี | Gno |       |  |
| prj_092 | 56 | ฟาร์มสุราษฎร์ธานี (กำหนดฟาร์มสร้างเสร็จ เดือน 6-68) | สุกร | lot2 | 314.6 | Solar Car park | 20.0 | 2025-10-15 | 2026-03-05 | 2025-06-18 | 88.35 | 100.0 | -11.65 | DELAYED | ล่าช้ากว่าแผน | P&S | ใต้ | สุราษฎร์ธานี | Pun |       | 8.457470069623755, 99.0774608378047 |
| prj_093 | 57 | ฟาร์มอุตรดิตถ์ | สุกร | lot2 | 314.6 | Solar Car park | 20.0 | 2025-10-15 | 2026-03-05 | 2025-08-02 | 87.1 | 100.0 | -12.9 | DELAYED | ล่าช้ากว่าแผน | 24x | เหนือ | อุตรดิตถ์ | Gno |       |  |
| prj_094 | 133 | ฟาร์มสุกรพันธุ์อุดมสุข | สุกร | lot2 | 371.8 | Solar Car park | 20.0 | 2025-10-15 | 2026-03-05 |  | 87.1 | 100.0 | -12.9 | DELAYED | ล่าช้ากว่าแผน |  |  |  |  |       |  |
| prj_095 | 118 | ฟาร์มสุกรสระบัว | สุกร | lot2 | 371.8 | Solar Car park | 20.0 | 2025-10-15 | 2026-03-05 | 2025-06-18 | 87.6 | 100.0 | -12.4 | DELAYED | ล่าช้ากว่าแผน | Xin | ตะวันออก | ปราจีนบุรี | Flame |       | 13.802810963689481, 101.66791847727322 |
| prj_096 | 68 | ฟาร์มสุกรจอมทอง | สุกร | lot2 | 471.9 | Solar Car park | 41.0 | 2025-10-15 | 2026-03-05 | 2025-01-10 | 87.1 | 100.0 | -12.9 | DELAYED | ล่าช้ากว่าแผน | 24X | เหนือ | เชียงใหม่ | Gno |       |  |
| prj_097 | 34 | ฟาร์มไก่พันธุ์เขาไม้แก้ว1 | สัตว์ปีก | lot2 | 529.1 | Solar Car park | 41.0 | 2025-10-15 | 2026-03-12 | 2025-06-18 | 94.5 | 100.0 | -5.5 | SLIGHT_DELAY | ล่าช้าเล็กน้อย | CWE | กลาง | ปราจีนบุรี | Flame |       |  |
| prj_098 | 204 | โรงงานแปรรูปมีนบุรี1 | อาหารแปรรูป | lot2 | 999.57 | Solar Rooftop | 2.0 | 2025-10-15 | 2026-04-18 | 2025-08-15 | 89.35 | 100.0 | -10.65 | DELAYED | ล่าช้ากว่าแผน | MPC | ปริมลฑล | กทม. | FLAME |       |  |
| prj_099 | 203 | โรงงานอาหารสัตว์ราชบุรี | อาหารสัตว์ | lot2 | 1472.9 | Solar Fishery | 34.0 | 2025-10-15 | 2026-05-27 | 2025-08-10 | 87.85 | 100.0 | -12.15 | DELAYED | ล่าช้ากว่าแผน | TM | กลาง | ราชบุรี | Pun |       |  |
| prj_100 | 187 | โรงชำแหละสุกรศรีษะเกษ | ชำแหละสุกร | lot2 | 2002.0 | Solar Rooftop | 3.0 | 2025-10-15 | 2026-05-27 | 2025-08-15 | 85.35 | 98.2 | -12.85 | DELAYED | ล่าช้ากว่าแผน | ST | อีสาน | ศรีษะเกษ | M |       |  |
| prj_101 | 64 | ฟาร์มเตรียมทดแทนเขาไร่ | สุกร | lot3 | 57.2 | Solar Car park | 19.0 | 2026-05-01 | 2026-09-19 | 2025-08-02 | 86.5 | 98.5 | -12.0 | DELAYED | ล่าช้ากว่าแผน | 24x | เหนือ | พิษณุโลก | Gno |       |  |
| prj_102 | 44 | ฟาร์มปู่ย่าพันธุ์ ชัยภูมิ1 | สัตว์ปีก | lot3 | 57.2 | Solar Car park | 19.0 | 2026-02-01 | 2026-07-22 | 2025-06-21 | 86.5 | 100.0 | -13.5 | DELAYED | ล่าช้ากว่าแผน | WER | อีสาน | ชัยภูมิ | ICE |       |  |
| prj_103 | 144 | ฟาร์มสุกรขุนน้ำใส 2 | สุกร | lot3 | 57.2 | Solar Car park | 19.0 | 2026-06-01 | 2026-11-19 | 2025-03-03 | 86.5 | 85.38 | 1.12 | ON_TRACK | ตามแผนงาน | PPP | อีสาน | ชัยภูมิ | ICE |       |  |
| prj_104 | 59 | ฟาร์มสุกรพันธุ์กำแพงเพชร 1 | สุกร | lot3 | 57.2 | Solar Car park | 19.0 | 2026-03-01 | 2026-08-26 | 2025-08-03 | 88.1 | 100.0 | -11.9 | DELAYED | ล่าช้ากว่าแผน | 24x | เหนือ | กำแพงเพชร | Gno |       |  |
| prj_105 | 141 | ฟาร์มสุกรบ้านเขว้า | สุกร | lot3 | 157.3 | Solar Car park | 19.0 | 2026-05-01 | 2026-09-19 | 2025-03-03 | 86.5 | 98.5 | -12.0 | DELAYED | ล่าช้ากว่าแผน | WER | อีสาน | ชัยภูมิ | ICE |       |  |
| prj_106 | 63 | ฟาร์มสุกรพันธุ์วัดโบสถ์ | สุกร | lot3 | 157.3 | Solar Car park | 19.0 | 2026-05-01 | 2026-10-26 | 2025-08-01 | 86.5 | 97.92 | -11.42 | DELAYED | ล่าช้ากว่าแผน | 24X | เหนือ | พิษณุโลก | Gno |       |  |
| prj_107 | 142 | ฟาร์มสุกรพันธุ์สกลนคร | สุกร | lot3 | 157.3 | Solar Car park | 19.0 | 2026-06-01 | 2026-11-19 | 2025-08-15 | 36.05 | 91.49 | -55.44 | DELAYED | ล่าช้ากว่าแผน | PPP | อีสาน | สกลนคร | M |       |  |
| prj_108 | 38 | ฟาร์มไก่พันธุ์ลาดตะเคียน2 | สัตว์ปีก | lot3 | 214.5 | Solar Car park | 19.0 | 2026-03-01 | 2026-08-19 | 18/4/0206 | 89.5 | 100.0 | -10.5 | DELAYED | ล่าช้ากว่าแผน | CWE | กลาง | ปราจีนบุรี | Flame |       | 13.821266220885418, 101.69455761466602 |
| prj_109 | 178 | ฟาร์มวิเชียรบุรี | สุกร | lot3 | 214.5 | Solar Car park | 19.0 | 2026-05-01 | 2026-10-04 | 2025-03-03 | 82.32 | 94.5 | -12.18 | DELAYED | ล่าช้ากว่าแผน | TBB | อีสาน | เพชรบูรณ์ | ICE |       |  |
| prj_110 | 136 | ฟาร์มสุกรขุนคอนสวรรค์ | สุกร | lot3 | 214.5 | Solar Car park | 19.0 | 2026-02-01 | 2026-07-22 |  | 86.5 | 100.0 | -13.5 | DELAYED | ล่าช้ากว่าแผน |  |  |  |  |       |  |
| prj_111 | 143 | ฟาร์มสุกรชัยภูมิ | สุกร | lot3 | 214.5 | Solar Car park | 19.0 | 2026-02-01 | 2026-07-22 | 2025-08-10 | 86.2 | 100.0 | -13.8 | DELAYED | ล่าช้ากว่าแผน | PPP | อีสาน | ชัยภูมิ | Boss |       |  |
| prj_112 | 138 | ฟาร์มสุกรพันธุ์ศรีมงคล | สุกร | lot3 | 214.5 | Solar Car park | 19.0 | 2026-02-01 | 2026-06-22 | 2025-08-11 | 82.0 | 100.0 | -18.0 | DELAYED | ล่าช้ากว่าแผน | PPP | อีสาน | อุดรธานี | M |       |  |
| prj_113 | 137 | ฟาร์มสุกรภูแลนคา | สุกร | lot3 | 214.5 | Solar Car park | 19.0 | 2026-02-01 | 2026-06-22 |  | 86.8 | 100.0 | -13.2 | DELAYED | ล่าช้ากว่าแผน |  |  |  |  |       |  |
| prj_114 | 90 | ฟาร์มสุกรแสลงพัน | สุกร | lot3 | 214.5 | Solar Car park | 19.0 | 2026-05-01 | 2026-09-19 | 2025-03-03 | 86.5 | 98.5 | -12.0 | DELAYED | ล่าช้ากว่าแผน |  |  |  |  |       |  |
| prj_115 | 147 | ฟาร์มสุกรขอนแก่น (มัญจาคีรี) | สุกร | lot3 | 371.8 | Solar Car park | 20.0 | 2026-02-01 | 2026-06-22 | 2025-08-11 | 86.8 | 100.0 | -13.2 | DELAYED | ล่าช้ากว่าแผน | PPP | อีสาน | ขอนแก่น | M |       |  |
| prj_116 | 184 | โรงงานแปรรูปกุ้งระโนด เฟส 2 | แปรรูปสัตว์น้ำ | lot3 | 377.52 | Solar Rooftop | 2.0 | 2026-05-01 | 2026-11-02 | 2025-08-10 | 77.92 | 92.56 | -14.64 | DELAYED | ล่าช้ากว่าแผน | P&S | ใต้ | สงขลา | Pun |       |  |
| prj_117 | 207 | ศูนย์ปรับปรุงพันธุ์กรรมกุ้งปะทิว | สัตว์น้ำ | lot3 | 889.46 | Solar Car park N type | 41.0 | 2025-12-26 | 2026-10-05 | 2026-02-26 | 70.84 | 98.89 | -28.05 | DELAYED | ล่าช้ากว่าแผน |  |  |  |  |       |  |
| prj_118 | 172 | ฟาร์มกำแพงเพชร 2 | สุกร | lot3 | 942.37 | Solar Car park | 41.0 | 2026-07-01 | 2026-12-04 | 2025-08-15 | 37.13 | 64.71 | -27.58 | DELAYED | ล่าช้ากว่าแผน | 24X | เหนือ | กำแพงเพชร | #N/A |       |  |
| prj_119 | 110 | ฟาร์มสุกรขุนกบินทร์บุรี | สุกรตะวันออก | Lot3-2 | 157.3 | Solar Car park | 19.0 | 2026-07-01 | 2027-01-02 | 2025-08-10 | 20.0 | 79.05 | -59.05 | DELAYED | ล่าช้ากว่าแผน | ว่าง | ตะวันออก | ปราจีนบุรี | #N/A |       |  |
| prj_120 | 123 | ฟาร์มสุกรขุนซับใหญ่ | สุกรตะวันออก | Lot3-2 | 157.3 | Solar Car park | 19.0 | 2026-07-01 | 2027-01-02 | 2025-08-10 | 75.86 | 79.05 | -3.19 | SLIGHT_DELAY | ล่าช้าเล็กน้อย | CWE | ตะวันออก | สระแก้ว | #N/A |       |  |
| prj_121 | 104 | ฟาร์มสุกรขุนระยอง 2 | สุกรตะวันออก | Lot3-2 | 157.3 | Solar Car park | 19.0 | 2026-07-01 | 2026-12-04 | 2025-08-10 | 61.7 | 59.3 | 2.4 | ON_TRACK | ตามแผนงาน | MTT | ตะวันออก | ระยอง | #N/A |       |  |
| prj_122 | 111 | ฟาร์มสุกรขุนหมอนนาง | สุกรตะวันออก | Lot3-2 | 157.3 | Solar Car park | 19.0 | 2026-07-01 | 2027-01-02 | 2025-08-10 | 20.0 | 79.05 | -59.05 | DELAYED | ล่าช้ากว่าแผน | MTT | ตะวันออก | ชลบุรี | #N/A |       |  |
| prj_123 | 116 | ฟาร์มสุกรพันธุ์ปราจีนบุรี 1 | สุกรตะวันออก | Lot3-2 | 157.3 | Solar Car park | 19.0 | 2026-07-01 | 2027-01-02 | 2025-08-10 | 75.86 | 79.05 | -3.19 | SLIGHT_DELAY | ล่าช้าเล็กน้อย | ว่าง | ตะวันออก | ปราจีนบุรี | #N/A |       |  |
| prj_124 | 211 | โรงงานชำแหละไก่ลำปาง-2 | ชำแหละไก่ | Lot3-2 | 157.3 | Solar Car park | 19.0 | 2026-04-18 | 2026-09-06 | 2026-03-09 | 89.5 | 99.93 | -10.43 | DELAYED | ล่าช้ากว่าแผน |  |  |  |  |       |  |
| prj_125 | 102 | ฟาร์มสุกรขุนจันทบุรี 2 | สุกรตะวันออก | Lot3-2 | 214.5 | Solar Car park | 19.0 | 2026-06-15 | 2027-01-01 | 2025-08-10 | 65.97 | 75.56 | -9.59 | SLIGHT_DELAY | ล่าช้าเล็กน้อย | ว่าง | ตะวันออก | จันทบุรี | #N/A |       |  |
| prj_126 | 210 | โรงชำแหละสุกรกาญจนบุรี | ชำแหละสุกร | Lot3-2 | 214.5 | Solar Car park | 19.0 | 2026-04-01 | 2026-09-04 | 2026-02-09 | 87.23 | 100.0 | -12.77 | DELAYED | ล่าช้ากว่าแผน |  |  |  |  |       |  |
| prj_127 | 205 | โรงงานแปรรูปเนื้อไก่สระบุรี | แปรรูปไก่ | Lot3-2 | 642.4 | Solar Car park N type | 20.0 | 2026-07-01 | 2026-11-19 | 2026-04-26 | 71.47 | 81.48 | -10.01 | DELAYED | ล่าช้ากว่าแผน | ประมูลราคา |  |  | Pun |       |  |
| prj_128 | 217 | โรงงานอาหารสัตว์บกธารเกษม | อาหารสัตว์ | Lot3-2 | 949.0 | Solar Car park | 41.0 | 2026-07-01 | 2026-12-03 | 2026-04-20 | 19.0 | 59.1 | -40.1 | DELAYED | ล่าช้ากว่าแผน |  |  |  |  |       |  |
| prj_129 | 129 | ฟาร์มแม่กลอง1 | สัตว์น้ำ | LOT4 | 797.5 | Solar Car park | 41.0 | 2026-09-01 | 2027-02-19 | 2026-08-15 | 5.9 | 0.7 | 5.2 | ON_TRACK | ตามแผนงาน |  |  |  |  | 2026-08-10, 2026-08-17, 2026-08-24, 2026-08-31, 2026-09-07, 2026-09-14, 2026-09-21, 2026-09-28, 2026-10-05, 2026-10-12, 2026-10-19, 2026-10-26, 2026-11-02, 2026-11-09, 2026-11-16, 2026-11-23, 2026-11-30, 2026-12-07, 2026-12-14, 2026-12-21, 2026-12-28, 2027-01-04, 2027-01-11, 2027-01-18, 2027-01-25, 2027-02-01, 2027-02-08, 2027-02-15, 2027-02-22 W1 (10/08/26), W2 (17/08/26), W3 (24/08/26), W4 (31/08/26), W5 (07/09/26), W6 (14/09/26), W7 (21/09/26), W8 (28/09/26), W9 (05/10/26), W10 (12/10/26), W11 (19/10/26), W12 (26/10/26), W13 (02/11/26), W14 (09/11/26), W15 (16/11/26), W16 (23/11/26), W17 (30/11/26), W18 (07/12/26), W19 (14/12/26), W20 (21/12/26), W21 (28/12/26), W22 (04/01/27), W23 (11/01/27), W24 (18/01/27), W25 (25/01/27), W26 (01/02/27), W27 (08/02/27), W28 (15/02/27), W29 (22/02/27) 0.0, 0.0, 0.0, 1.51, 4.69, 7.87, 12.71, 16.5, 20.26, 22.71, 24.77, 35.34, 45.17, 54.8, 63.58, 74.7, 78.48, 83.06, 86.49, 89.18, 90.81, 92.05, 93.29, 95.52, 96.76, 98.0, 99.0, 100.0, 100.0 1.67, 4.23, 5.9, 5.9, 5.9, , , , , , , , , , , , , , , , , , , , , , , ,  0.0, 0.0, 0.0, 1.51, 3.18, 3.18, 4.84, 3.79, 3.76, 2.45, 2.05, 10.57, 9.83, 9.63, 8.77, 11.12, 3.78, 4.58, 3.43, 2.68, 1.63, 1.24, 1.24, 2.24, 1.24, 1.24, 1.0, 1.0, 0.0 1.67, 2.57, 1.67, 0.0, 0.0, 0.0, 0.0, 0.0, 0.0, 0.0, 0.0, 0.0, 0.0, 0.0, 0.0, 0.0, 0.0, 0.0, 0.0, 0.0, 0.0, 0.0, 0.0, 0.0, 0.0, 0.0, 0.0, 0.0, 0.0 |  |
| prj_130 | 130 | โรงชำแหละสุกรห้วยส้ม | ชำแหละสุกร | LOT4 | 309.5 | Solar Car park N type | 20.0 | 2026-09-01 | 2027-02-19 | 2025-07-23 | 0.0 | 0.7 | -0.7 | SLIGHT_DELAY | ล่าช้าเล็กน้อย | TM | อีสาน | บุรีรัมย์ | M |       |  |
| prj_131 | 131 | โรงอาหารสัตว์ท่าเรือ | อาหารสัตว์ | LOT4 | 841.0 | Solar Car park N type | 41.0 | 2026-09-01 | 2027-02-19 |  | 0.0 | 0.7 | -0.7 | SLIGHT_DELAY | ล่าช้าเล็กน้อย |  |  |  |  | 2026-08-31, 2026-09-07, 2026-09-14, 2026-09-21, 2026-09-28, 2026-10-05, 2026-10-12, 2026-10-19, 2026-10-26, 2026-11-02, 2026-11-09, 2026-11-16, 2026-11-23, 2026-11-30, 2026-12-07, 2026-12-14, 2026-12-21, 2026-12-28, 2027-01-04, 2027-01-11, 2027-01-18, 2027-01-25, 2027-02-01, 2027-02-08, 2027-02-15, 2027-02-22 W1 (31/08/26), W2 (07/09/26), W3 (14/09/26), W4 (21/09/26), W5 (28/09/26), W6 (05/10/26), W7 (12/10/26), W8 (19/10/26), W9 (26/10/26), W10 (02/11/26), W11 (09/11/26), W12 (16/11/26), W13 (23/11/26), W14 (30/11/26), W15 (07/12/26), W16 (14/12/26), W17 (21/12/26), W18 (28/12/26), W19 (04/01/27), W20 (11/01/27), W21 (18/01/27), W22 (25/01/27), W23 (01/02/27), W24 (08/02/27), W25 (15/02/27), W26 (22/02/27) 1.51, 4.69, 7.87, 12.71, 16.5, 20.26, 22.71, 24.77, 35.34, 45.17, 54.8, 63.58, 74.7, 78.48, 83.06, 86.49, 89.18, 90.81, 92.05, 93.29, 95.52, 96.76, 98.0, 99.0, 100.0, 100.0 0.0, 0.0, , , , , , , , , , , , , , , , , , , , , , , ,  1.51, 3.18, 3.18, 4.84, 3.79, 3.76, 2.45, 2.05, 10.57, 9.83, 9.63, 8.77, 11.12, 3.78, 4.58, 3.43, 2.68, 1.63, 1.24, 1.24, 2.24, 1.24, 1.24, 1.0, 1.0, 0.0 0.0, 0.0, 0.0, 0.0, 0.0, 0.0, 0.0, 0.0, 0.0, 0.0, 0.0, 0.0, 0.0, 0.0, 0.0, 0.0, 0.0, 0.0, 0.0, 0.0, 0.0, 0.0, 0.0, 0.0, 0.0, 0.0 |  |
| prj_132 | 132 | โรงอาหารสัตว์ปักธงชัย | อาหารสัตว์ | LOT4 | 957.0 | Solar Car park | 41.0 | 2026-09-01 | 2027-02-19 | 2025-07-23 | 0.0 | 0.7 | -0.7 | SLIGHT_DELAY | ล่าช้าเล็กน้อย | TBB | อีสาน | อำนาจเจริญ | M |       |  |
| prj_133 | 133 | ฟาร์มสุกรศิลาทิพย์ | สุกร | LOT4 | 377.0 | Solar Car park | 20.0 | 2026-09-01 | 2027-02-19 | 2025-07-02 | 0.0 | 0.7 | -0.7 | SLIGHT_DELAY | ล่าช้าเล็กน้อย | AT | กลาง | กาญจนบุรี | Pun |       |  |
| prj_134 | 134 | ฟาร์มไก่กระทงโพธ์งาม | ไก่กระทง | LOT4 | 478.5 | Solar Car park | 41.0 | 2026-09-01 | 2027-02-19 | 2025-07-23 | 0.0 | 0.7 | -0.7 | SLIGHT_DELAY | ล่าช้าเล็กน้อย | ST | อีสาน | สุรินทร์ | M |       |  |
| prj_135 | 135 | โรงงานแปรรูปสัตว์น้ำแกลง | แปรรูปสัตว์น้ำ | LOT4 | 300.1 | Solar Car park | 20.0 | 2026-09-01 | 2027-02-19 | 2025-07-23 | 0.0 | 0.7 | -0.7 | SLIGHT_DELAY | ล่าช้าเล็กน้อย | TBB | อีสาน | ยโสธร | M |       |  |
| prj_136 | 136 | ฟาร์มสุกรพนัสนิคม | สุกร | LOT4 | 159.5 | Solar Car park | 19.0 | 2026-09-01 | 2027-02-19 | 2025-08-10 | 0.0 | 0.7 | -0.7 | SLIGHT_DELAY | ล่าช้าเล็กน้อย | PPP | อีสาน | ชัยภูมิ | Boss |       |  |
| prj_137 | 137 | อสร.หนองจอก | อสร. | LOT4 | 829.4 | Solar Rooftop | 3.0 | 2026-09-01 | 2027-02-19 | 2025-08-10 | 0.0 | 0.6 | -0.6 | SLIGHT_DELAY | ล่าช้าเล็กน้อย | PPP | อีสาน | ชัยภูมิ | Boss |       |  |
