| id | business_unit | order_no | name | lot | capacity_kwp | installation_type | type_code | planned_start | planned_finish | actual_start | actual_progress_pct | planned_progress_pct | variance_pct | status | status_th | s_curve | last_webhook_edit |
| --- | --- | --- | --- | --- | --- | --- | --- | --- | --- | --- | --- | --- | --- | --- | --- | --- | --- |
| prj_001 | สุกรตะวันออก | 96 | ฟาร์มสุกรขุนเขาหินซ้อน | CC | 57.2 | Solar Car park | 19 | 2025-11-01 | 2026-05-05 | 2025-08-10 | 13.5 | 100.0 | -86.5 | DELAYED | ล่าช้ากว่าแผน |       |  |
| prj_002 | สุกรตะวันออก | 108 | ฟาร์มสุกรขุนพนัสนิคม | CC | 157.3 | Solar Car park | 19 | 2025-11-01 | 2026-05-05 | 2025-08-10 | 13.0 | 100.0 | -87.0 | DELAYED | ล่าช้ากว่าแผน |       |  |
| prj_003 | สุกรตะวันออก | 124 | ฟาร์มสุกรพันธุ์สระแก้ว | CC | 157.3 | Solar Car park | 19 | 2025-11-01 | 2026-05-05 | 2025-08-10 | 13.0 | 100.0 | -87.0 | DELAYED | ล่าช้ากว่าแผน |       |  |
| prj_004 | สัตว์ปีก | 186 | ฟาร์มกาญจนบุรี | CC | 214.5 | Solar Car park | 19 | 2025-08-17 | 2026-03-05 | 2025-08-10 | 8.0 | 100.0 | -92.0 | DELAYED | ล่าช้ากว่าแผน |       |  |
| prj_005 | สุกรตะวันออก | 113 | ฟาร์มสุกรขุนโคกมะตูม | CC | 214.5 | Solar Car park | 20 | 2025-11-01 | 2026-05-05 | 2025-08-10 | 14.0 | 100.0 | -86.0 | DELAYED | ล่าช้ากว่าแผน |       |  |
| prj_006 | สุกรตะวันออก | 107 | ฟาร์มสุกรท่าจาม | CC | 214.5 | Solar Car park | 20 | 2025-11-20 | 2026-05-24 | 2025-08-10 | 16.5 | 100.0 | -83.5 | DELAYED | ล่าช้ากว่าแผน |       |  |
| prj_007 | สุกรใต้ | 76 | ฟาร์มสุกรบางหนาง (ระนอง) | CC | 214.5 | Solar Car park | 20 | 2025-11-01 | 2026-05-05 | 2025-08-15 | 2.0 | 100.0 | -98.0 | DELAYED | ล่าช้ากว่าแผน |       |  |
| prj_008 | ไก่ย่างห้าดาว | 20 | โรงงานไก่ย่างห้าดาวเชียงใหม่ | CC | 214.5 | Solar Rooftop | 2 | 2024-02-05 | 2025-12-11 | 2025-08-10 | 7.0 | 100.0 | -93.0 | DELAYED | ล่าช้ากว่าแผน |       |  |
| prj_009 | โรงข้าว | 214 | โรงงานข้าววังแดง-2 | CC | 214.5 | Solar Rooftop | 20 | 2026-03-01 | 2026-08-19 |  | 0.0 | 99.0 | -99.0 | DELAYED | ล่าช้ากว่าแผน | 2026-02-23, 2026-03-02, 2026-03-09, 2026-03-16, 2026-03-23, 2026-03-30, 2026-04-06, 2026-04-13, 2026-04-20, 2026-04-27, 2026-05-04, 2026-05-11, 2026-05-18, 2026-05-25, 2026-06-01, 2026-06-08, 2026-06-15, 2026-06-22, 2026-06-29, 2026-07-06, 2026-07-13, 2026-07-20, 2026-07-27, 2026-08-03, 2026-08-10, 2026-08-17, 2026-08-24 W1 (23/02/26), W2 (02/03/26), W3 (09/03/26), W4 (16/03/26), W5 (23/03/26), W6 (30/03/26), W7 (06/04/26), W8 (13/04/26), W9 (20/04/26), W10 (27/04/26), W11 (04/05/26), W12 (11/05/26), W13 (18/05/26), W14 (25/05/26), W15 (01/06/26), W16 (08/06/26), W17 (15/06/26), W18 (22/06/26), W19 (29/06/26), W20 (06/07/26), W21 (13/07/26), W22 (20/07/26), W23 (27/07/26), W24 (03/08/26), W25 (10/08/26), W26 (17/08/26), W27 (24/08/26) 1.67, 5.6, 12.55, 19.41, 27.72, 35.22, 43.02, 61.02, 70.36, 79.7, 81.82, 86.42, 88.01, 89.61, 91.2, 93.62, 94.82, 96.02, 97.22, 98.42, 98.62, 98.83, 98.87, 98.91, 98.96, 99.0, 99.0 0.0, 0.0, 0.0, 0.0, 0.0, 0.0, 0.0, 0.0, 0.0, 0.0, 0.0, 0.0, 0.0, 0.0, 0.0, 0.0, 0.0, 0.0, 0.0, 0.0, 0.0, 0.0, 0.0, 0.0, 0.0, 0.0, 0.0 1.67, 3.93, 6.95, 6.87, 8.3, 7.5, 7.8, 18.0, 9.34, 9.34, 2.12, 4.6, 1.6, 1.6, 1.6, 2.42, 1.2, 1.2, 1.2, 1.2, 0.2, 0.2, 0.04, 0.04, 0.04, 0.04, 0.0 0.0, 0.0, 0.0, 0.0, 0.0, 0.0, 0.0, 0.0, 0.0, 0.0, 0.0, 0.0, 0.0, 0.0, 0.0, 0.0, 0.0, 0.0, 0.0, 0.0, 0.0, 0.0, 0.0, 0.0, 0.0, 0.0, 0.0 |  |
| prj_010 | ชำแหละสุกร | 145 | โรงชำแหละสุกรหนองคาย | CC | 214.5 | Solar Car park | 20 | 2025-11-01 | 2026-05-05 | 2025-08-15 | 2.0 | 100.0 | -98.0 | DELAYED | ล่าช้ากว่าแผน |       |  |
| prj_011 | โรงฟัก | 216 | โรงฟักไข่กบินทร์บุรี3 | CC | 214.5 | Solar Car park | 19 | 2026-03-01 | 2026-08-19 |  | 0.0 | 100.0 | -100.0 | DELAYED | ล่าช้ากว่าแผน | 2026-02-23, 2026-03-02, 2026-03-09, 2026-03-16, 2026-03-23, 2026-03-30, 2026-04-06, 2026-04-13, 2026-04-20, 2026-04-27, 2026-05-04, 2026-05-11, 2026-05-18, 2026-05-25, 2026-06-01, 2026-06-08, 2026-06-15, 2026-06-22, 2026-06-29, 2026-07-06, 2026-07-13, 2026-07-20, 2026-07-27, 2026-08-03, 2026-08-10, 2026-08-17, 2026-08-24 W1 (23/02/26), W2 (02/03/26), W3 (09/03/26), W4 (16/03/26), W5 (23/03/26), W6 (30/03/26), W7 (06/04/26), W8 (13/04/26), W9 (20/04/26), W10 (27/04/26), W11 (04/05/26), W12 (11/05/26), W13 (18/05/26), W14 (25/05/26), W15 (01/06/26), W16 (08/06/26), W17 (15/06/26), W18 (22/06/26), W19 (29/06/26), W20 (06/07/26), W21 (13/07/26), W22 (20/07/26), W23 (27/07/26), W24 (03/08/26), W25 (10/08/26), W26 (17/08/26), W27 (24/08/26) 1.67, 5.6, 12.55, 19.47, 27.82, 35.37, 43.23, 61.28, 70.67, 80.07, 82.24, 86.89, 88.54, 90.19, 91.83, 94.3, 95.56, 96.81, 98.06, 99.32, 99.57, 99.83, 99.87, 99.91, 99.96, 100.0, 100.0 0.0, 0.0, 0.0, 0.0, 0.0, 0.0, 0.0, 0.0, 0.0, 0.0, 0.0, 0.0, 0.0, 0.0, 0.0, 0.0, 0.0, 0.0, 0.0, 0.0, 0.0, 0.0, 0.0, 0.0, 0.0, 0.0, 0.0 1.67, 3.93, 6.95, 6.92, 8.35, 7.55, 7.85, 18.05, 9.39, 9.39, 2.17, 4.65, 1.65, 1.65, 1.65, 2.47, 1.25, 1.25, 1.25, 1.25, 0.25, 0.25, 0.04, 0.04, 0.04, 0.04, 0.0 0.0, 0.0, 0.0, 0.0, 0.0, 0.0, 0.0, 0.0, 0.0, 0.0, 0.0, 0.0, 0.0, 0.0, 0.0, 0.0, 0.0, 0.0, 0.0, 0.0, 0.0, 0.0, 0.0, 0.0, 0.0, 0.0, 0.0 |  |
| prj_012 | สัตว์ปีก | 41 | ฟาร์มไก่รุ่นไข่ นาดี (ปราจีนบุรี) | CC | 314.6 | Solar Car park | 20 | 2025-09-17 | 2026-04-05 | 2025-08-10 | 8.0 | 100.0 | -92.0 | DELAYED | ล่าช้ากว่าแผน |       |  |
| prj_013 | สัตว์ปีก | 40 | ฟาร์มไก่รุ่นไข่ โพธิ์ประทับช้าง | CC | 314.6 | Solar Car park | 20 | 2025-09-17 | 2026-04-05 | 2025-08-10 | 7.0 | 100.0 | -93.0 | DELAYED | ล่าช้ากว่าแผน |       |  |
| prj_014 | ทั่วไป |  | โรงฟักไข่บ้านไร่ | CC | 321.2 | Solar Car park | 20 | 2026-05-01 | 2026-10-04 |  | 0.0 | 92.24 | -92.24 | DELAYED | ล่าช้ากว่าแผน | 2026-04-27, 2026-05-04, 2026-05-11, 2026-05-18, 2026-05-25, 2026-06-01, 2026-06-08, 2026-06-15, 2026-06-22, 2026-06-29, 2026-07-06, 2026-07-13, 2026-07-20, 2026-07-27, 2026-08-03, 2026-08-10, 2026-08-17, 2026-08-24, 2026-08-31, 2026-09-07, 2026-09-14, 2026-09-21, 2026-09-28, 2026-10-05 W1 (27/04/26), W2 (04/05/26), W3 (11/05/26), W4 (18/05/26), W5 (25/05/26), W6 (01/06/26), W7 (08/06/26), W8 (15/06/26), W9 (22/06/26), W10 (29/06/26), W11 (06/07/26), W12 (13/07/26), W13 (20/07/26), W14 (27/07/26), W15 (03/08/26), W16 (10/08/26), W17 (17/08/26), W18 (24/08/26), W19 (31/08/26), W20 (07/09/26), W21 (14/09/26), W22 (21/09/26), W23 (28/09/26), W24 (05/10/26) 1.67, 5.0, 8.95, 14.26, 18.21, 21.76, 32.16, 42.63, 53.2, 59.98, 74.7, 78.45, 81.8, 84.45, 89.06, 90.66, 92.05, 93.29, 95.52, 96.76, 98.0, 99.0, 100.0, 100.0 0.0, 0.0, 0.0, 0.0, 0.0, 0.0, 0.0, 0.0, 0.0, 0.0, 0.0, 0.0, 0.0, 0.0, 0.0, 0.0, 0.0, 0.0, 0.0, 0.0, , , ,  1.67, 3.33, 3.95, 5.31, 3.95, 3.55, 10.4, 10.47, 10.57, 6.77, 14.72, 3.75, 3.35, 2.65, 4.6, 1.6, 1.39, 1.24, 2.24, 1.24, 1.24, 1.0, 1.0, 0.0 0.0, 0.0, 0.0, 0.0, 0.0, 0.0, 0.0, 0.0, 0.0, 0.0, 0.0, 0.0, 0.0, 0.0, 0.0, 0.0, 0.0, 0.0, 0.0, 0.0, 0.0, 0.0, 0.0, 0.0 |  |
| prj_015 | อสร. | 202 | โรงงานอาหารสำเร็จรูปหนองจอก-2 | CC | 514.8 | Solar Car park | 42 | 2025-09-10 | 2026-04-22 | 2025-05-06 | 17.45 | 97.6 | -80.15 | DELAYED | ล่าช้ากว่าแผน |       | 1788547301.573539 |
| prj_016 | อสร | 213 | โรงงานอาหาร แปรรูปเนื้อเป็ด-ไก่ บางนา | CC | 534.82 | Solar Rooftop | 20 | 2026-03-01 | 2026-08-19 |  | 0.0 | 100.0 | -100.0 | DELAYED | ล่าช้ากว่าแผน | 2026-02-23, 2026-03-02, 2026-03-09, 2026-03-16, 2026-03-23, 2026-03-30, 2026-04-06, 2026-04-13, 2026-04-20, 2026-04-27, 2026-05-04, 2026-05-11, 2026-05-18, 2026-05-25, 2026-06-01, 2026-06-08, 2026-06-15, 2026-06-22, 2026-06-29, 2026-07-06, 2026-07-13, 2026-07-20, 2026-07-27, 2026-08-03, 2026-08-10, 2026-08-17, 2026-08-24 W1 (23/02/26), W2 (02/03/26), W3 (09/03/26), W4 (16/03/26), W5 (23/03/26), W6 (30/03/26), W7 (06/04/26), W8 (13/04/26), W9 (20/04/26), W10 (27/04/26), W11 (04/05/26), W12 (11/05/26), W13 (18/05/26), W14 (25/05/26), W15 (01/06/26), W16 (08/06/26), W17 (15/06/26), W18 (22/06/26), W19 (29/06/26), W20 (06/07/26), W21 (13/07/26), W22 (20/07/26), W23 (27/07/26), W24 (03/08/26), W25 (10/08/26), W26 (17/08/26), W27 (24/08/26) 1.67, 5.6, 12.55, 19.41, 27.72, 35.29, 43.16, 61.23, 70.64, 80.06, 82.25, 86.92, 88.58, 90.25, 91.92, 94.4, 95.68, 96.95, 98.22, 99.42, 99.62, 99.83, 99.87, 99.91, 99.96, 100.0, 100.0 0.0, 0.0, 0.0, 0.0, 0.0, 0.0, 0.0, 0.0, 0.0, 0.0, 0.0, 0.0, 0.0, 0.0, 0.0, 0.0, 0.0, 0.0, 0.0, 0.0, 0.0, 0.0, 0.0, 0.0, 0.0, 0.0, 0.0 1.67, 3.93, 6.95, 6.87, 8.3, 7.57, 7.87, 18.07, 9.41, 9.41, 2.19, 4.67, 1.67, 1.67, 1.67, 2.49, 1.27, 1.27, 1.27, 1.2, 0.2, 0.2, 0.04, 0.04, 0.04, 0.04, 0.0 0.0, 0.0, 0.0, 0.0, 0.0, 0.0, 0.0, 0.0, 0.0, 0.0, 0.0, 0.0, 0.0, 0.0, 0.0, 0.0, 0.0, 0.0, 0.0, 0.0, 0.0, 0.0, 0.0, 0.0, 0.0, 0.0, 0.0 |  |
| prj_017 | อสร | 215 | โรงงานอาหารสำเร็จรูป สระบุรี | CC | 540.2 | Solar Car park | 20 | 2026-05-01 | 2026-10-04 | 2026-03-13 | 5.0 | 92.24 | -87.24 | DELAYED | ล่าช้ากว่าแผน |       |  |
| prj_018 | อาหารสัตว์ |  | โรงงานอาหารสัตว์ท่าเรือ | CC | 829.4 | Solar Car park | 41 | 2025-12-26 | 2026-09-19 |  | 0.0 | 99.07 | -99.07 | DELAYED | ล่าช้ากว่าแผน |       |  |
| prj_019 | อาหารสัตว์ | 197 | โรงงานอาหารสัตว์หนองแค สระบุรี | CC | 1742.0 | Solar Car park | 42 | 2025-12-26 | 2026-10-11 | 2025-03-03 | 5.0 | 98.65 | -93.65 | DELAYED | ล่าช้ากว่าแผน |       |  |
| prj_020 | แปรรูปสัตว์น้ำ | 47 | โรงงานแปรรูปสัตว์น้ำ แกลง (ระยอง) 2 | CC | 1859.0 | Solar Floating&Farm | 39 | 2025-07-01 | 2026-03-19 |  | 0.0 | 100.0 | -100.0 | DELAYED | ล่าช้ากว่าแผน |       |  |
| prj_021 | โรงข้าว | 212 | โรงงานข้าวนครหลวง-2 | CC | 2259.4 | Solar Rooftop | 24 | 2026-03-01 | 2026-07-20 |  | 0.0 | 93.0 | -93.0 | DELAYED | ล่าช้ากว่าแผน | 2026-02-23, 2026-03-02, 2026-03-09, 2026-03-16, 2026-03-23, 2026-03-30, 2026-04-06, 2026-04-13, 2026-04-20, 2026-04-27, 2026-05-04, 2026-05-11, 2026-05-18, 2026-05-25, 2026-06-01, 2026-06-08, 2026-06-15, 2026-06-22, 2026-06-29, 2026-07-06, 2026-07-13, 2026-07-20 W1 (23/02/26), W2 (02/03/26), W3 (09/03/26), W4 (16/03/26), W5 (23/03/26), W6 (30/03/26), W7 (06/04/26), W8 (13/04/26), W9 (20/04/26), W10 (27/04/26), W11 (04/05/26), W12 (11/05/26), W13 (18/05/26), W14 (25/05/26), W15 (01/06/26), W16 (08/06/26), W17 (15/06/26), W18 (22/06/26), W19 (29/06/26), W20 (06/07/26), W21 (13/07/26), W22 (20/07/26) 1.33, 4.63, 11.15, 18.12, 27.42, 33.73, 40.63, 56.74, 67.08, 77.43, 78.49, 81.73, 83.17, 84.61, 86.05, 88.37, 89.47, 90.58, 91.68, 92.79, 92.89, 93.0 0.0, 0.0, 0.0, 0.0, 0.0, 0.0, 0.0, 0.0, 0.0, 0.0, 0.0, 0.0, 0.0, 0.0, 0.0, 0.0, 0.0, 0.0, 0.0, 0.0, 0.0, 0.0 1.33, 3.3, 6.51, 6.97, 9.3, 6.3, 6.9, 16.1, 10.34, 10.34, 1.06, 3.24, 1.44, 1.44, 1.44, 2.32, 1.11, 1.11, 1.11, 1.11, 0.11, 0.11 0.0, 0.0, 0.0, 0.0, 0.0, 0.0, 0.0, 0.0, 0.0, 0.0, 0.0, 0.0, 0.0, 0.0, 0.0, 0.0, 0.0, 0.0, 0.0, 0.0, 0.0, 0.0 |  |
| prj_022 | แปรรูปสัตว์น้ำ | 19 | โรงงานแปรรูปสัตว์น้ำ แกลง (ระยอง) 1 | CC | 2559.7 | Solar Floating&Farm | 39 | 2025-09-15 | 2026-04-25 |  | 0.0 | 100.0 | -100.0 | DELAYED | ล่าช้ากว่าแผน |       |  |
| prj_023 | สุกรตะวันออก | 103 | ฟาร์มสุกรพันธุ์ระยอง 1 | CC | 157.3 | Solar Car park | 19 | 2026-07-01 | 2026-12-04 | 2025-08-10 | 20.0 | 49.65 | -29.65 | DELAYED | ล่าช้ากว่าแผน |       |  |
| prj_024 | ชำแหละสุกร | 22 | โรงงานชำแหละสุกร บางคล้า | CC EPC | 1887.6 | Solar Floating | 18 | 2025-09-17 | 2026-04-29 |  | 0.0 | 100.0 | -100.0 | DELAYED | ล่าช้ากว่าแผน |       |  |
| prj_025 | ชำแหละสุกร | 99 | โรงชำแหละสุกรปลวกแดง | CC ไม่มีพื้นที่ | 57.2 | Solar Rooftop | 1 | 2025-08-10 | 2026-01-28 | 2025-08-10 | 10.0 | 94.0 | -84.0 | DELAYED | ล่าช้ากว่าแผน | 2025-08-04, 2025-08-11, 2025-08-18, 2025-08-25, 2025-09-01, 2025-09-08, 2025-09-15, 2025-09-22, 2025-09-29, 2025-10-06, 2025-10-13, 2025-10-20, 2025-10-27, 2025-11-03, 2025-11-10, 2025-11-17, 2025-11-24, 2025-12-01, 2025-12-08, 2025-12-15, 2025-12-22, 2025-12-29, 2026-01-05, 2026-01-12, 2026-01-19, 2026-01-26, 2026-02-02 W1 (04/08/25), W2 (11/08/25), W3 (18/08/25), W4 (25/08/25), W5 (01/09/25), W6 (08/09/25), W7 (15/09/25), W8 (22/09/25), W9 (29/09/25), W10 (06/10/25), W11 (13/10/25), W12 (20/10/25), W13 (27/10/25), W14 (03/11/25), W15 (10/11/25), W16 (17/11/25), W17 (24/11/25), W18 (01/12/25), W19 (08/12/25), W20 (15/12/25), W21 (22/12/25), W22 (29/12/25), W23 (05/01/26), W24 (12/01/26), W25 (19/01/26), W26 (26/01/26), W27 (02/02/26) 2.58, 7.43, 16.43, 25.04, 33.73, 38.43, 43.42, 58.62, 67.15, 75.69, 77.16, 81.44, 83.01, 84.59, 86.16, 88.5, 89.69, 90.88, 92.08, 93.27, 93.46, 93.65, 93.74, 93.83, 93.91, 94.0, 94.0 0.35, 0.72, 1.09, 1.47, 1.84, 2.21, 2.58, 2.95, 3.32, 3.69, 4.06, 4.43, 4.8, 5.18, 5.55, 5.92, 6.29, 6.66, 7.03, 7.4, 7.77, 8.14, 8.52, 8.89, 9.26, 9.63, 10.0 2.58, 4.85, 8.99, 8.61, 8.7, 4.7, 5.0, 15.2, 8.54, 8.54, 1.48, 4.28, 1.58, 1.58, 1.58, 2.34, 1.19, 1.19, 1.19, 1.19, 0.19, 0.19, 0.09, 0.09, 0.09, 0.09, 0.0 0.35, 0.37, 0.37, 0.37, 0.37, 0.37, 0.37, 0.37, 0.37, 0.37, 0.37, 0.37, 0.37, 0.37, 0.37, 0.37, 0.37, 0.37, 0.37, 0.37, 0.37, 0.37, 0.37, 0.37, 0.37, 0.37, 0.37 |  |
| prj_026 | สุกร | 106 | ฟาร์มสุกรพันธุ์ชลบุรี | CC ไม่มีพื้นที่ | 214.5 | Solar Car park | 20 | 2025-08-20 | 2026-02-21 |  | 0.0 | 100.0 | -100.0 | DELAYED | ล่าช้ากว่าแผน | 2025-08-18, 2025-08-25, 2025-09-01, 2025-09-08, 2025-09-15, 2025-09-22, 2025-09-29, 2025-10-06, 2025-10-13, 2025-10-20, 2025-10-27, 2025-11-03, 2025-11-10, 2025-11-17, 2025-11-24, 2025-12-01, 2025-12-08, 2025-12-15, 2025-12-22, 2025-12-29, 2026-01-05, 2026-01-12, 2026-01-19, 2026-01-26, 2026-02-02, 2026-02-09, 2026-02-16, 2026-02-23 W1 (18/08/25), W2 (25/08/25), W3 (01/09/25), W4 (08/09/25), W5 (15/09/25), W6 (22/09/25), W7 (29/09/25), W8 (06/10/25), W9 (13/10/25), W10 (20/10/25), W11 (27/10/25), W12 (03/11/25), W13 (10/11/25), W14 (17/11/25), W15 (24/11/25), W16 (01/12/25), W17 (08/12/25), W18 (15/12/25), W19 (22/12/25), W20 (29/12/25), W21 (05/01/26), W22 (12/01/26), W23 (19/01/26), W24 (26/01/26), W25 (02/02/26), W26 (09/02/26), W27 (16/02/26), W28 (23/02/26) 1.78, 5.52, 12.84, 19.91, 30.11, 37.68, 48.55, 62.86, 74.47, 79.86, 84.73, 86.9, 88.48, 90.05, 92.33, 93.62, 94.69, 95.76, 97.23, 98.63, 99.2, 99.77, 100.0, 100.0, 100.0, 100.0, 100.0, 100.0 0.0, 0.0, 0.0, 0.0, 0.0, 0.0, 0.0, 0.0, 0.0, 0.0, 0.0, 0.0, 0.0, 0.0, 0.0, 0.0, 0.0, 0.0, 0.0, 0.0, 0.0, 0.0, 0.0, 0.0, 0.0, 0.0, 0.0, 0.0 1.78, 3.74, 7.32, 7.07, 10.2, 7.57, 10.87, 14.31, 11.61, 5.39, 4.87, 2.17, 1.57, 1.57, 2.29, 1.29, 1.07, 1.07, 1.47, 1.4, 0.57, 0.57, 0.57, 0.17, 0.17, 0.17, 0.17, 0.0 0.0, 0.0, 0.0, 0.0, 0.0, 0.0, 0.0, 0.0, 0.0, 0.0, 0.0, 0.0, 0.0, 0.0, 0.0, 0.0, 0.0, 0.0, 0.0, 0.0, 0.0, 0.0, 0.0, 0.0, 0.0, 0.0, 0.0, 0.0 |  |
| prj_027 | สุกร | 71 | ฟาร์มสุกรพันธุ์รัตภูมิ 2 | CC ไม่มีพื้นที่ | 214.5 | Solar Car park | 20 | 2025-04-02 | 2026-04-05 |  | 0.0 | 100.0 | -100.0 | DELAYED | ล่าช้ากว่าแผน |       |  |
| prj_028 | ชำแหละสุกร | 128 | โรงชำแหละสุกรจอหอ | CC ไม่มีพื้นที่ | 214.5 | Solar Rooftop | 2 | 2025-04-02 | 2026-04-05 |  | 0.0 | 100.0 | -100.0 | DELAYED | ล่าช้ากว่าแผน |       |  |
| prj_029 | ชำแหละสุกร | 146 | โรงชำแหละสุกรหนองบัวลำภู | CC ไม่มีพื้นที่ | 214.5 | Solar Rooftop | 2 | 2025-04-02 | 2026-04-05 |  | 0.0 | 100.0 | -100.0 | DELAYED | ล่าช้ากว่าแผน |       |  |
| prj_030 | สุกร | 55 | ฟาร์มบ้านม่วง | CC ไม่มีพื้นที่ | 314.6 | Solar Car park | 20 | 2025-12-01 | 2026-06-04 | 2025-06-18 | 20.6 | 100.0 | -79.4 | DELAYED | ล่าช้ากว่าแผน |       |  |
| prj_031 | สุกร | 148 | ฟาร์มสุกรพระยืน | CC ไม่มีพื้นที่ | 314.6 | Solar Car park | 20 | 2025-10-20 | 2026-04-23 | 2025-08-15 | 1.0 | 100.0 | -99.0 | DELAYED | ล่าช้ากว่าแผน |       |  |
| prj_032 | ชำแหละสุกร | 181 | โรงงานชำแหละ จันทบุรี (นายายอาม) | CC ไม่มีพื้นที่ | 314.6 | Solar Floating | 17 | 2025-11-01 | 2026-05-05 | 2025-08-10 | 10.5 | 100.0 | -89.5 | DELAYED | ล่าช้ากว่าแผน |       |  |
| prj_033 | สุกร | 153 | ฟาร์มหนองคาย | CC ไม่มีพื้นที่ | 371.8 | Solar Car park | 20 | 2025-09-01 | 2026-03-05 |  | 0.0 | 94.5 | -94.5 | DELAYED | ล่าช้ากว่าแผน |       |  |
| prj_034 | CEE | 200 | CEE-2 | Demo lot1 | 62.92 | Solar Rooftop | 20 | 2025-05-20 | 2026-01-25 | 2025-05-06 | 87.0 | 100.0 | -13.0 | DELAYED | ล่าช้ากว่าแผน |       |  |
| prj_035 | แปรรูป | 199 | โรงงานอาหารแปรรูปมีนบุรี2 | Demo lot1 | 870.87 | Solar Rooftop | 2 | 2025-07-01 | 2026-02-08 | 2025-06-06 | 89.1 | 100.0 | -10.9 | DELAYED | ล่าช้ากว่าแผน |       |  |
| prj_036 | อสร. | 27 | โรงงานอาหารสำเร็จรูป มหาชัย | Demo lot1 | 1481.48 | Solar Rooftop | 24 | 2025-05-20 | 2025-12-07 | 2025-05-06 | 89.0 | 100.0 | -11.0 | DELAYED | ล่าช้ากว่าแผน |       |  |
| prj_037 | สุกร | 149 | ฟาร์มท่าจะหลุง | LOT AG | 57.2 | Solar Car park | 19 | 2026-01-15 | 2026-07-05 | 2025-07-03 | 85.3 | 100.0 | -14.7 | DELAYED | ล่าช้ากว่าแผน |       |  |
| prj_038 | สัตว์ปีก | 10 | ฟาร์มไก่พันธุ์ กุดจิก | LOT AG | 157.3 | Solar Car park | 19 | 2025-10-15 | 2026-04-11 | 2025-08-03 | 91.6 | 100.0 | -8.4 | SLIGHT_DELAY | ล่าช้าเล็กน้อย |       |  |
| prj_039 | สัตว์ปีก | 6 | ฟาร์มไก่พันธุ์ เกษมทรัพย์1 | LOT AG | 157.3 | Solar Car park | 19 | 2025-10-15 | 2026-04-04 | 2025-06-18 | 87.1 | 100.0 | -12.9 | DELAYED | ล่าช้ากว่าแผน |       |  |
| prj_040 | สัตว์ปีก | 7 | ฟาร์มไก่พันธุ์ เกษมทรัพย์2 | LOT AG | 157.3 | Solar Car park | 19 | 2025-10-07 | 2026-04-03 | 2025-06-18 | 92.5 | 100.0 | -7.5 | SLIGHT_DELAY | ล่าช้าเล็กน้อย |       |  |
| prj_041 | สัตว์ปีก | 1 | ฟาร์มไก่พันธุ์ โกรกหว้า1 | LOT AG | 157.3 | Solar Car park | 19 | 2025-10-01 | 2026-04-04 | 2025-05-07 | 92.05 | 100.0 | -7.95 | SLIGHT_DELAY | ล่าช้าเล็กน้อย |       |  |
| prj_042 | สัตว์ปีก | 8 | ฟาร์มไก่พันธุ์ โกรกหว้า2 | LOT AG | 157.3 | Solar Car park | 19 | 2025-10-10 | 2026-04-06 | 2025-05-31 | 92.05 | 100.0 | -7.95 | SLIGHT_DELAY | ล่าช้าเล็กน้อย |       |  |
| prj_043 | สัตว์ปีก | 9 | ฟาร์มไก่พันธุ์ โกรกหว้า3 | LOT AG | 157.3 | Solar Car park | 19 | 2025-10-15 | 2026-05-05 | 2025-06-18 | 91.15 | 100.0 | -8.85 | SLIGHT_DELAY | ล่าช้าเล็กน้อย |       |  |
| prj_044 | สัตว์ปีก | 2 | ฟาร์มไก่พันธุ์ โกรกหว้า4 | LOT AG | 157.3 | Solar Car park | 19 | 2026-03-01 | 2026-08-19 | 2025-07-11 | 85.2 | 100.0 | -14.8 | DELAYED | ล่าช้ากว่าแผน |       |  |
| prj_045 | สัตว์ปีก | 11 | ฟาร์มไก่พันธุ์ ธนัฐบดี | LOT AG | 157.3 | Solar Car park | 19 | 2026-07-01 | 2026-11-19 | 2025-07-12 | 26.38 | 68.23 | -41.85 | DELAYED | ล่าช้ากว่าแผน |       |  |
| prj_046 | สัตว์ปีก | 15 | ฟาร์มไก่พันธุ์ พรหมราช6 | LOT AG | 157.3 | Solar Car park | 19 | 2025-10-15 | 2026-04-11 | 2025-06-18 | 91.6 | 100.0 | -8.4 | SLIGHT_DELAY | ล่าช้าเล็กน้อย |       |  |
| prj_047 | สัตว์ปีก | 3 | ฟาร์มไก่พันธุ์ พรหมราช7 | LOT AG | 157.3 | Solar Car park | 19 | 2025-10-15 | 2026-04-04 | 2025-06-18 | 91.6 | 100.0 | -8.4 | SLIGHT_DELAY | ล่าช้าเล็กน้อย |       |  |
| prj_048 | สัตว์ปีก | 193 | ฟาร์มไก่พันธุ์ ลาดบัวขาว1 | LOT AG | 157.3 | Solar Car park | 19 | 2025-07-20 | 2026-01-07 | 2025-06-18 | 89.5 | 100.0 | -10.5 | DELAYED | ล่าช้ากว่าแผน |       |  |
| prj_049 | สัตว์ปีก | 4 | ฟาร์มไก่พันธุ์ ลาดบัวขาว2 | LOT AG | 157.3 | Solar Car park | 19 | 2026-01-17 | 2026-07-07 | 2025-07-11 | 83.7 | 100.0 | -16.3 | DELAYED | ล่าช้ากว่าแผน |       |  |
| prj_050 | สัตว์ปีก | 17 | ฟาร์มไก่พันธุ์ อุดมทรัพย์ | LOT AG | 157.3 | Solar Car park | 19 | 2025-09-01 | 2026-02-26 | 2025-06-18 | 90.5 | 100.0 | -9.5 | SLIGHT_DELAY | ล่าช้าเล็กน้อย |       |  |
| prj_051 | สุกร | 126 | ฟาร์มสุกรพันธุ์ชุมพวง | LOT AG | 157.3 | Solar Car park | 19 | 2025-10-15 | 2026-04-04 | 2025-07-23 | 87.1 | 100.0 | -12.9 | DELAYED | ล่าช้ากว่าแผน |       |  |
| prj_052 | สัตว์ปีก | 12 | ฟาร์มไก่พันธุ์ ปักธงชัย1 | LOT AG | 214.5 | Solar Car park | 19 | 2025-10-15 | 2026-04-11 | 2025-06-18 | 87.1 | 100.0 | -12.9 | DELAYED | ล่าช้ากว่าแผน |       |  |
| prj_053 | สัตว์ปีก | 5 | ฟาร์มไก่พันธุ์ วังโรงใหญ่ | LOT AG | 214.5 | Solar Car park | 19 | 2025-07-20 | 2026-01-14 | 2025-06-18 | 90.5 | 100.0 | -9.5 | SLIGHT_DELAY | ล่าช้าเล็กน้อย |       |  |
| prj_054 | สุกร | 127 | ฟาร์มสุกรพันธุ์โชคชัย | LOT AG | 214.5 | Solar Car park | 19 | 2025-10-15 | 2026-04-04 | 2025-07-23 | 88.6 | 100.0 | -11.4 | DELAYED | ล่าช้ากว่าแผน |       |  |
| prj_055 | สัตว์ปีก | 16 | ฟาร์มไก่พันธุ์ สีคิ้ว | LOT AG | 314.6 | Solar Farm | 7 | 2025-07-20 | 2026-01-14 | 2025-06-18 | 91.5 | 100.0 | -8.5 | SLIGHT_DELAY | ล่าช้าเล็กน้อย |       |  |
| prj_056 | ไก่ย่างห้าดาว | 21 | โรงงานไก่ย่างห้าดาวโคราช (กำลังก่อสร้าง)-2567 | LOT AG | 451.88 | Solar roof&Car Park | 2 | 2025-07-01 | 2025-12-19 | 2025-06-09 | 90.5 | 100.0 | -9.5 | SLIGHT_DELAY | ล่าช้าเล็กน้อย |       |  |
| prj_057 | แปรรูป | 188 | โรงงานแปรรูปเนื้อไก่โคราช3 | LOT AG | 2171.02 | Solar Car park | 42 | 2026-07-01 | 2027-03-27 | 2025-07-13 | 13.0 | 22.39 | -9.39 | SLIGHT_DELAY | ล่าช้าเล็กน้อย |       |  |
| prj_058 | สัตว์ปีก | 45 | ฟาร์มปู่ย่าพันธุ์ ชัยภูมิ5 | lot1 | 57.2 | Solar Car park | 19 | 2025-07-20 | 2026-01-07 | 2025-06-19 | 93.5 | 100.0 | -6.5 | SLIGHT_DELAY | ล่าช้าเล็กน้อย |       |  |
| prj_059 | สุกร | 70 | ฟาร์มสุกรพันธุ์รัตภูมิ 1 | lot1 | 57.2 | Solar Car park | 19 | 2025-08-01 | 2026-01-19 | 2025-06-18 | 90.0 | 100.0 | -10.0 | SLIGHT_DELAY | ล่าช้าเล็กน้อย |       |  |
| prj_060 | สัตว์ปีก | 36 | ฟาร์มไก่พันธุ์แสงทอง | lot1 | 157.3 | Solar Car park | 19 | 2025-07-20 | 2026-01-14 | 2025-06-18 | 93.5 | 100.0 | -6.5 | SLIGHT_DELAY | ล่าช้าเล็กน้อย |       |  |
| prj_061 | สัตว์ปีก | 42 | ฟาร์มปู่ย่าพันธุ์ เขาตําบล | lot1 | 157.3 | Solar Car park | 19 | 2025-07-20 | 2026-01-07 | 2025-06-18 | 88.0 | 100.0 | -12.0 | DELAYED | ล่าช้ากว่าแผน |       |  |
| prj_062 | สุกร | 85 | ฟาร์มสุกรพันธุ์บ่อทอง | lot1 | 157.3 | Solar Car park | 19 | 2025-08-10 | 2025-12-29 | 2025-06-18 | 88.0 | 100.0 | -12.0 | DELAYED | ล่าช้ากว่าแผน | 2025-06-16, 2025-06-23, 2025-06-30, 2025-07-07, 2025-07-14, 2025-07-21, 2025-07-28, 2025-08-04, 2025-08-11, 2025-08-18, 2025-08-25, 2025-09-01, 2025-09-08, 2025-09-15, 2025-09-22, 2025-09-29, 2025-10-06, 2025-10-13, 2025-10-20, 2025-10-27, 2025-11-03, 2025-11-10, 2025-11-17, 2025-11-24, 2025-12-01, 2025-12-08, 2025-12-15, 2025-12-22, 2025-12-29 W1 (16/06/25), W2 (23/06/25), W3 (30/06/25), W4 (07/07/25), W5 (14/07/25), W6 (21/07/25), W7 (28/07/25), W8 (04/08/25), W9 (11/08/25), W10 (18/08/25), W11 (25/08/25), W12 (01/09/25), W13 (08/09/25), W14 (15/09/25), W15 (22/09/25), W16 (29/09/25), W17 (06/10/25), W18 (13/10/25), W19 (20/10/25), W20 (27/10/25), W21 (03/11/25), W22 (10/11/25), W23 (17/11/25), W24 (24/11/25), W25 (01/12/25), W26 (08/12/25), W27 (15/12/25), W28 (22/12/25), W29 (29/12/25) 0.0, 0.0, 0.0, 0.0, 0.0, 0.0, 0.0, 1.67, 5.6, 12.55, 19.59, 28.07, 35.74, 43.72, 61.9, 71.41, 80.76, 82.89, 87.5, 89.1, 90.71, 92.31, 94.74, 95.95, 97.16, 98.37, 99.58, 99.79, 100.0 0.4, 0.8, 1.26, 8.38, 15.5, 17.22, 18.28, 19.33, 20.39, 21.44, 22.5, 28.96, 35.53, 42.56, 50.18, 58.29, 67.59, 69.48, 71.36, 75.5, 83.56, 84.11, 84.67, 85.22, 85.78, 86.33, 86.89, 87.44, 88.0 0.0, 0.0, 0.0, 0.0, 0.0, 0.0, 0.0, 1.67, 3.93, 6.95, 7.04, 8.48, 7.68, 7.98, 18.18, 9.52, 9.35, 2.13, 4.6, 1.6, 1.6, 1.6, 2.42, 1.21, 1.21, 1.21, 1.21, 0.21, 0.21 0.4, 0.4, 0.46, 7.12, 7.12, 1.72, 1.06, 1.06, 1.06, 1.06, 1.06, 6.46, 6.58, 7.03, 7.63, 8.11, 9.31, 1.89, 1.89, 4.14, 8.06, 0.56, 0.56, 0.56, 0.56, 0.56, 0.56, 0.56, 0.56 |  |
| prj_063 | สุกร | 82 | ฟาร์มสุกรพันธุ์สุพรรณบุรี | lot1 | 157.3 | Solar Car park | 19 | 2025-08-10 | 2026-02-04 | 2025-06-18 | 89.0 | 100.0 | -11.0 | DELAYED | ล่าช้ากว่าแผน |       |  |
| prj_064 | สุกร | 86 | ฟาร์มสุกรขุนโคกตูม | lot1 | 214.5 | Solar Car park | 19 | 2025-08-10 | 2026-01-28 | 2025-06-18 | 88.0 | 100.0 | -12.0 | DELAYED | ล่าช้ากว่าแผน |       |  |
| prj_065 | สุกร | 84 | ฟาร์มสุกรพันธุ์นครนายก | lot1 | 214.5 | Solar Car park | 19 | 2025-08-10 | 2026-01-28 | 2025-06-18 | 88.0 | 100.0 | -12.0 | DELAYED | ล่าช้ากว่าแผน |       |  |
| prj_066 | สุกร | 52 | ฟาร์มหนองบัว | lot1 | 214.5 | Solar Car park | 19 | 2025-08-01 | 2026-01-26 | 2025-06-18 | 89.5 | 100.0 | -10.5 | DELAYED | ล่าช้ากว่าแผน |       |  |
| prj_067 | สุกร | 69 | ฟาร์มสุกรพันธุ์ป่าบอน 1 | lot1 | 314.6 | Solar Car park | 20 | 2025-08-01 | 2025-12-20 | 2025-06-18 | 89.25 | 100.0 | -10.75 | DELAYED | ล่าช้ากว่าแผน |       |  |
| prj_068 | สุกร | 65 | ฟาร์มสุกรสุโขทัย | lot1 | 314.6 | Solar Car park | 20 | 2025-07-20 | 2025-12-08 | 2025-06-18 | 88.0 | 100.0 | -12.0 | DELAYED | ล่าช้ากว่าแผน | 2025-06-16, 2025-06-23, 2025-06-30, 2025-07-07, 2025-07-14, 2025-07-21, 2025-07-28, 2025-08-04, 2025-08-11, 2025-08-18, 2025-08-25, 2025-09-01, 2025-09-08, 2025-09-15, 2025-09-22, 2025-09-29, 2025-10-06, 2025-10-13, 2025-10-20, 2025-10-27, 2025-11-03, 2025-11-10, 2025-11-17, 2025-11-24, 2025-12-01, 2025-12-08 W1 (16/06/25), W2 (23/06/25), W3 (30/06/25), W4 (07/07/25), W5 (14/07/25), W6 (21/07/25), W7 (28/07/25), W8 (04/08/25), W9 (11/08/25), W10 (18/08/25), W11 (25/08/25), W12 (01/09/25), W13 (08/09/25), W14 (15/09/25), W15 (22/09/25), W16 (29/09/25), W17 (06/10/25), W18 (13/10/25), W19 (20/10/25), W20 (27/10/25), W21 (03/11/25), W22 (10/11/25), W23 (17/11/25), W24 (24/11/25), W25 (01/12/25), W26 (08/12/25) 0.0, 0.0, 0.0, 0.0, 1.67, 5.6, 12.55, 19.54, 27.96, 35.66, 43.65, 61.85, 71.38, 80.75, 82.9, 87.52, 89.15, 90.77, 92.39, 94.84, 96.07, 97.3, 98.53, 99.68, 99.84, 100.0 0.5, 1.0, 1.56, 8.79, 15.52, 17.85, 19.69, 20.94, 22.18, 24.92, 33.12, 40.32, 47.67, 51.32, 56.33, 63.37, 72.34, 76.85, 80.11, 83.37, 85.44, 85.95, 86.46, 86.97, 87.49, 88.0 0.0, 0.0, 0.0, 0.0, 1.67, 3.93, 6.95, 6.99, 8.42, 7.7, 8.0, 18.2, 9.54, 9.37, 2.15, 4.62, 1.62, 1.62, 1.62, 2.44, 1.23, 1.23, 1.23, 1.16, 0.16, 0.16 0.5, 0.5, 0.56, 7.23, 6.73, 2.33, 1.84, 1.24, 1.24, 2.74, 8.2, 7.2, 7.35, 3.65, 5.01, 7.05, 8.97, 4.51, 3.26, 3.26, 2.07, 0.51, 0.51, 0.51, 0.51, 0.51 |  |
| prj_069 | สุกร | 61 | ฟาร์มสุกรพันธุ์พิษณุโลก 1 | lot1 | 371.8 | Solar Car park | 41 | 2025-07-20 | 2025-12-08 | 2025-06-18 | 88.0 | 100.0 | -12.0 | DELAYED | ล่าช้ากว่าแผน | 2025-06-16, 2025-06-23, 2025-06-30, 2025-07-07, 2025-07-14, 2025-07-21, 2025-07-28, 2025-08-04, 2025-08-11, 2025-08-18, 2025-08-25, 2025-09-01, 2025-09-08, 2025-09-15, 2025-09-22, 2025-09-29, 2025-10-06, 2025-10-13, 2025-10-20, 2025-10-27, 2025-11-03, 2025-11-10, 2025-11-17, 2025-11-24, 2025-12-01, 2025-12-08 W1 (16/06/25), W2 (23/06/25), W3 (30/06/25), W4 (07/07/25), W5 (14/07/25), W6 (21/07/25), W7 (28/07/25), W8 (04/08/25), W9 (11/08/25), W10 (18/08/25), W11 (25/08/25), W12 (01/09/25), W13 (08/09/25), W14 (15/09/25), W15 (22/09/25), W16 (29/09/25), W17 (06/10/25), W18 (13/10/25), W19 (20/10/25), W20 (27/10/25), W21 (03/11/25), W22 (10/11/25), W23 (17/11/25), W24 (24/11/25), W25 (01/12/25), W26 (08/12/25) 0.0, 0.0, 0.0, 0.0, 1.67, 5.6, 12.55, 19.54, 27.96, 35.66, 43.65, 61.85, 71.38, 80.75, 83.2, 87.52, 89.15, 90.77, 92.39, 94.84, 96.07, 97.3, 98.53, 99.68, 99.84, 100.0 0.5, 1.0, 1.56, 8.79, 15.52, 17.85, 19.51, 20.58, 21.89, 24.71, 32.99, 40.27, 48.14, 52.32, 57.14, 63.9, 72.47, 76.58, 81.48, 83.81, 85.64, 86.11, 86.59, 87.06, 87.53, 88.0 0.0, 0.0, 0.0, 0.0, 1.67, 3.93, 6.95, 6.99, 8.42, 7.7, 8.0, 18.2, 9.54, 9.37, 2.45, 4.32, 1.62, 1.62, 1.62, 2.44, 1.23, 1.23, 1.23, 1.16, 0.16, 0.16 0.5, 0.5, 0.56, 7.23, 6.73, 2.33, 1.66, 1.06, 1.32, 2.82, 8.28, 7.28, 7.88, 4.18, 4.81, 6.77, 8.57, 4.11, 4.91, 2.33, 1.83, 0.47, 0.47, 0.47, 0.47, 0.47 |  |
| prj_070 | สุกร | 119 | ฟาร์มสุกรลาดตะเคียน | lot1 | 471.9 | Solar Car park | 41 | 2025-07-20 | 2025-12-08 | 2025-06-18 | 89.0 | 100.0 | -11.0 | DELAYED | ล่าช้ากว่าแผน |       |  |

| id | business_unit | order_no | name | lot | capacity_kwp | installation_type | type_code | planned_start | planned_finish | actual_start | actual_progress_pct | planned_progress_pct | variance_pct | status | status_th | s_curve |
| --- | --- | --- | --- | --- | --- | --- | --- | --- | --- | --- | --- | --- | --- | --- | --- | --- |
| prj_071 | สัตว์ปีก | 43 | ฟาร์มปู่ย่าพันธุ์ โคกตูม | lot2 | 57.2 | Solar Car park | 19 | 2025-10-15 | 2026-04-04 | 2025-07-01 | 87.1 | 100.0 | -12.9 | DELAYED | ล่าช้ากว่าแผน |       |
| prj_072 | สัตว์ปีก | 28 | ฟาร์มเป็ดพันธุ์บัวชุม | lot2 | 57.2 | Solar Car park | 19 | 2025-10-15 | 2026-03-05 | 2025-06-21 | 91.1 | 100.0 | -8.9 | SLIGHT_DELAY | ล่าช้าเล็กน้อย |       |
| prj_073 | สุกร | 80 | ฟาร์มสุกรขุนนพรัตน์ | lot2 | 57.2 | Solar Car park | 19 | 2025-10-15 | 2026-04-04 | 2025-07-02 | 87.1 | 100.0 | -12.9 | DELAYED | ล่าช้ากว่าแผน |       |
| prj_074 | สัตว์ปีก | 37 | ฟาร์มไก่พันธุ์พรหมยาม | lot2 | 157.3 | Solar Car park | 19 | 2025-10-15 | 2026-03-05 | 2025-07-01 | 87.1 | 100.0 | -12.9 | DELAYED | ล่าช้ากว่าแผน |       |
| prj_075 | สัตว์ปีก | 39 | ฟาร์มไก่พันธุ์สระแก้ว | lot2 | 157.3 | Solar Car park | 19 | 2025-10-15 | 2026-04-11 | 2025-07-01 | 87.6 | 100.0 | -12.4 | DELAYED | ล่าช้ากว่าแผน |       |
| prj_076 | สัตว์ปีก | 30 | ฟาร์มเป็ดพันธุ์วังม่วง | lot2 | 157.3 | Solar Car park | 19 | 2025-10-15 | 2026-04-11 | 2025-08-02 | 91.1 | 100.0 | -8.9 | SLIGHT_DELAY | ล่าช้าเล็กน้อย |       |
| prj_077 | สุกร | 95 | ฟาร์มสุกรขุนปรานบุรี 2 | lot2 | 157.3 | Solar Car park | 19 | 2025-10-15 | 2026-04-04 | 2025-08-04 | 87.1 | 100.0 | -12.9 | DELAYED | ล่าช้ากว่าแผน |       |
| prj_078 | สุกร | 87 | ฟาร์มสุกรพันธุ์บ้านหมี่ | lot2 | 157.3 | Solar Car park | 19 | 2025-10-15 | 2026-04-04 | 2025-08-03 | 87.1 | 100.0 | -12.9 | DELAYED | ล่าช้ากว่าแผน |       |
| prj_079 | สุกร | 130 | ฟาร์มสุกรพันธุ์บุรีรัมย์ | lot2 | 157.3 | Solar Car park | 19 | 2025-10-15 | 2026-04-04 | 2025-07-23 | 87.1 | 100.0 | -12.9 | DELAYED | ล่าช้ากว่าแผน |       |
| prj_080 | สัตว์ปีก | 35 | ฟาร์มไก่พันธุ์ลาดตะเคียน1 | lot2 | 214.5 | Solar Car park | 19 | 2025-10-15 | 2026-04-04 | 2025-07-18 | 89.5 | 100.0 | -10.5 | DELAYED | ล่าช้ากว่าแผน |       |
| prj_081 | สุกร | 53 | ฟาร์มพะเยา | lot2 | 214.5 | Solar Car park | 19 | 2025-10-15 | 2026-04-11 | 2025-08-01 | 87.1 | 100.0 | -12.9 | DELAYED | ล่าช้ากว่าแผน |       |
| prj_082 | สุกร | 168 | ฟาร์มสุกรขุนไร่สาม | lot2 | 214.5 | Solar Car park | 19 | 2025-10-15 | 2026-04-11 | 2025-08-15 | 84.9 | 100.0 | -15.1 | DELAYED | ล่าช้ากว่าแผน |       |
| prj_083 | สุกร | 89 | ฟาร์มสุกรพระพุทธบาท | lot2 | 214.5 | Solar Car park | 19 | 2025-10-15 | 2026-04-04 | 2025-01-30 | 87.1 | 100.0 | -12.9 | DELAYED | ล่าช้ากว่าแผน |       |
| prj_084 | สุกร | 94 | ฟาร์มสุกรพันธุ์บ่อพลอย | lot2 | 214.5 | Solar Car park | 19 | 2025-10-15 | 2026-04-04 | 2025-08-10 | 87.1 | 100.0 | -12.9 | DELAYED | ล่าช้ากว่าแผน |       |
| prj_085 | สุกร | 135 | ฟาร์มสุกรพันธุ์ยโสธร | lot2 | 214.5 | Solar Car park | 19 | 2025-10-15 | 2026-04-04 | 2025-07-23 | 84.55 | 100.0 | -15.45 | DELAYED | ล่าช้ากว่าแผน |       |
| prj_086 | สุกร | 134 | ฟาร์มสุกรพันธุ์สุรินทร์ | lot2 | 214.5 | Solar Car park | 19 | 2025-10-15 | 2026-04-04 | 2025-07-23 | 87.1 | 100.0 | -12.9 | DELAYED | ล่าช้ากว่าแผน |       |
| prj_087 | สุกร | 54 | ฟาร์มเขาสมโภชน์ | lot2 | 314.6 | Solar Car park | 20 | 2025-10-15 | 2026-03-05 | 2025-08-02 | 87.1 | 100.0 | -12.9 | DELAYED | ล่าช้ากว่าแผน |       |
| prj_088 | สุกร | 114 | ฟาร์มสุกรพันธุ์โคกอุดม | lot2 | 314.6 | Solar Car park | 41 | 2025-10-15 | 2026-03-05 | 2025-08-02 | 87.1 | 100.0 | -12.9 | DELAYED | ล่าช้ากว่าแผน |       |
| prj_089 | สุกร | 93 | ฟาร์มสุกรพันธุ์ราชบุรี | lot2 | 314.6 | Solar Car park | 20 | 2025-10-15 | 2026-03-05 | 2025-08-10 | 87.1 | 100.0 | -12.9 | DELAYED | ล่าช้ากว่าแผน |       |
| prj_090 | สุกร | 132 | ฟาร์มสุกรพันธุ์อำนาจเจริญ | lot2 | 314.6 | Solar Car park | 20 | 2025-10-15 | 2026-03-05 | 2025-07-23 | 86.65 | 100.0 | -13.35 | DELAYED | ล่าช้ากว่าแผน |       |
| prj_091 | สุกร | 81 | ฟาร์มสุกรอู่ทอง | lot2 | 314.6 | Solar Car park | 20 | 2025-10-15 | 2026-03-05 | 2025-08-10 | 87.1 | 100.0 | -12.9 | DELAYED | ล่าช้ากว่าแผน |       |
| prj_092 | สุกร | 56 | ฟาร์มสุราษฎร์ธานี (กำหนดฟาร์มสร้างเสร็จ เดือน 6-68) | lot2 | 314.6 | Solar Car park | 20 | 2025-10-15 | 2026-03-05 | 2025-06-18 | 88.35 | 100.0 | -11.65 | DELAYED | ล่าช้ากว่าแผน |       |
| prj_093 | สุกร | 57 | ฟาร์มอุตรดิตถ์ | lot2 | 314.6 | Solar Car park | 20 | 2025-10-15 | 2026-03-05 | 2025-08-02 | 87.1 | 100.0 | -12.9 | DELAYED | ล่าช้ากว่าแผน |       |
| prj_094 | สุกร | 133 | ฟาร์มสุกรพันธุ์อุดมสุข | lot2 | 371.8 | Solar Car park | 20 | 2025-10-15 | 2026-03-05 | 2025-07-02 | 87.1 | 100.0 | -12.9 | DELAYED | ล่าช้ากว่าแผน |       |
| prj_095 | สุกร | 118 | ฟาร์มสุกรสระบัว | lot2 | 371.8 | Solar Car park | 20 | 2025-10-15 | 2026-03-05 | 2025-06-18 | 87.6 | 100.0 | -12.4 | DELAYED | ล่าช้ากว่าแผน |       |
| prj_096 | สุกร | 68 | ฟาร์มสุกรจอมทอง | lot2 | 471.9 | Solar Car park | 41 | 2025-10-15 | 2026-03-05 | 2025-01-10 | 87.1 | 100.0 | -12.9 | DELAYED | ล่าช้ากว่าแผน |       |
| prj_097 | สัตว์ปีก | 34 | ฟาร์มไก่พันธุ์เขาไม้แก้ว1 | lot2 | 529.1 | Solar Car park | 41 | 2025-10-15 | 2026-03-12 | 2025-06-18 | 94.5 | 100.0 | -5.5 | SLIGHT_DELAY | ล่าช้าเล็กน้อย |       |
| prj_098 | อาหารแปรรูป | 204 | โรงงานแปรรูปมีนบุรี1 | lot2 | 999.57 | Solar Rooftop | 2 | 2025-10-15 | 2026-04-18 | 2025-08-15 | 89.35 | 100.0 | -10.65 | DELAYED | ล่าช้ากว่าแผน |       |
| prj_099 | อาหารสัตว์ | 203 | โรงงานอาหารสัตว์ราชบุรี | lot2 | 1472.9 | Solar Fishery | 34 | 2025-10-15 | 2026-05-27 | 2025-08-10 | 87.85 | 100.0 | -12.15 | DELAYED | ล่าช้ากว่าแผน |       |
| prj_100 | ชำแหละสุกร | 187 | โรงชำแหละสุกรศรีษะเกษ | lot2 | 2002.0 | Solar Rooftop | 3 | 2025-10-15 | 2026-05-27 | 2025-08-15 | 85.35 | 98.2 | -12.85 | DELAYED | ล่าช้ากว่าแผน |       |
| prj_101 | สุกร | 64 | ฟาร์มเตรียมทดแทนเขาไร่ | lot3 | 57.2 | Solar Car park | 19 | 2026-05-01 | 2026-09-19 | 2025-08-02 | 86.5 | 96.3 | -9.8 | SLIGHT_DELAY | ล่าช้าเล็กน้อย |       |
| prj_102 | สัตว์ปีก | 44 | ฟาร์มปู่ย่าพันธุ์ ชัยภูมิ1 | lot3 | 57.2 | Solar Car park | 19 | 2026-02-01 | 2026-07-22 | 2025-06-21 | 86.5 | 100.0 | -13.5 | DELAYED | ล่าช้ากว่าแผน |       |
| prj_103 | สุกร | 144 | ฟาร์มสุกรขุนน้ำใส 2 | lot3 | 57.2 | Solar Car park | 19 | 2026-06-01 | 2026-11-19 | 2025-03-03 | 86.5 | 80.84 | 5.66 | ON_TRACK | ตามแผนงาน |       |
| prj_104 | สุกร | 59 | ฟาร์มสุกรพันธุ์กำแพงเพชร 1 | lot3 | 57.2 | Solar Car park | 19 | 2026-03-01 | 2026-08-26 | 2025-08-03 | 88.1 | 99.99 | -11.89 | DELAYED | ล่าช้ากว่าแผน |       |
| prj_105 | สุกร | 141 | ฟาร์มสุกรบ้านเขว้า | lot3 | 157.3 | Solar Car park | 19 | 2026-05-01 | 2026-09-19 | 2025-03-03 | 86.5 | 96.3 | -9.8 | SLIGHT_DELAY | ล่าช้าเล็กน้อย |       |
| prj_106 | สุกร | 63 | ฟาร์มสุกรพันธุ์วัดโบสถ์ | lot3 | 157.3 | Solar Car park | 19 | 2026-05-01 | 2026-10-26 | 2025-08-01 | 86.5 | 95.65 | -9.15 | SLIGHT_DELAY | ล่าช้าเล็กน้อย |       |
| prj_107 | สุกร | 142 | ฟาร์มสุกรพันธุ์สกลนคร | lot3 | 157.3 | Solar Car park | 19 | 2026-06-01 | 2026-11-19 | 2025-08-15 | 36.05 | 88.52 | -52.47 | DELAYED | ล่าช้ากว่าแผน |       |
| prj_108 | สัตว์ปีก | 38 | ฟาร์มไก่พันธุ์ลาดตะเคียน2 | lot3 | 214.5 | Solar Car park | 19 | 2026-03-01 | 2026-08-19 | 0206-04-18 | 89.5 | 100.0 | -10.5 | DELAYED | ล่าช้ากว่าแผน |       |
| prj_109 | สุกร | 178 | ฟาร์มวิเชียรบุรี | lot3 | 214.5 | Solar Car park | 19 | 2026-05-01 | 2026-10-04 | 2025-03-03 | 82.32 | 92.3 | -9.98 | SLIGHT_DELAY | ล่าช้าเล็กน้อย |       |
| prj_110 | สุกร | 136 | ฟาร์มสุกรขุนคอนสวรรค์ | lot3 | 214.5 | Solar Car park | 19 | 2026-02-01 | 2026-07-22 | 2025-08-10 | 86.5 | 100.0 | -13.5 | DELAYED | ล่าช้ากว่าแผน |       |
| prj_111 | สุกร | 143 | ฟาร์มสุกรชัยภูมิ | lot3 | 214.5 | Solar Car park | 19 | 2026-02-01 | 2026-07-22 | 2025-08-10 | 86.2 | 100.0 | -13.8 | DELAYED | ล่าช้ากว่าแผน |       |
| prj_112 | สุกร | 138 | ฟาร์มสุกรพันธุ์ศรีมงคล | lot3 | 214.5 | Solar Car park | 19 | 2026-02-01 | 2026-06-22 | 2025-08-11 | 82.0 | 100.0 | -18.0 | DELAYED | ล่าช้ากว่าแผน |       |
| prj_113 | สุกร | 137 | ฟาร์มสุกรภูแลนคา | lot3 | 214.5 | Solar Car park | 19 | 2026-02-01 | 2026-06-22 | 2025-08-10 | 86.8 | 100.0 | -13.2 | DELAYED | ล่าช้ากว่าแผน |       |
| prj_114 | สุกร | 90 | ฟาร์มสุกรแสลงพัน | lot3 | 214.5 | Solar Car park | 19 | 2026-05-01 | 2026-09-19 | 2025-03-03 | 86.5 | 96.3 | -9.8 | SLIGHT_DELAY | ล่าช้าเล็กน้อย |       |
| prj_115 | สุกร | 147 | ฟาร์มสุกรขอนแก่น (มัญจาคีรี) | lot3 | 371.8 | Solar Car park | 20 | 2026-02-01 | 2026-06-22 | 2025-08-11 | 86.8 | 100.0 | -13.2 | DELAYED | ล่าช้ากว่าแผน |       |
| prj_116 | แปรรูปสัตว์น้ำ | 184 | โรงงานแปรรูปกุ้งระโนด เฟส 2 | lot3 | 377.52 | Solar Rooftop | 2 | 2026-05-01 | 2026-11-02 | 2025-08-10 | 77.92 | 90.31 | -12.39 | DELAYED | ล่าช้ากว่าแผน |       |
| prj_117 | สัตว์น้ำ | 207 | ศูนย์ปรับปรุงพันธุ์กรรมกุ้งปะทิว | lot3 | 889.46 | Solar Car park N type | 41 | 2025-12-26 | 2026-10-05 | 2026-02-26 | 70.84 | 98.06 | -27.22 | DELAYED | ล่าช้ากว่าแผน |       |
| prj_118 | สุกร | 172 | ฟาร์มกำแพงเพชร 2 | lot3 | 942.37 | Solar Car park | 41 | 2026-07-01 | 2026-12-04 | 2025-08-15 | 37.13 | 49.42 | -12.29 | DELAYED | ล่าช้ากว่าแผน |       |
| prj_119 | สุกรตะวันออก | 110 | ฟาร์มสุกรขุนกบินทร์บุรี | Lot3-2 | 157.3 | Solar Car park | 19 | 2026-07-01 | 2027-01-02 | 2025-08-10 | 20.0 | 66.13 | -46.13 | DELAYED | ล่าช้ากว่าแผน |       |
| prj_120 | สุกรตะวันออก | 123 | ฟาร์มสุกรขุนซับใหญ่ | Lot3-2 | 157.3 | Solar Car park | 19 | 2026-07-01 | 2027-01-02 | 2025-08-10 | 75.86 | 66.13 | 9.73 | ON_TRACK | ตามแผนงาน |       |
| prj_121 | สุกรตะวันออก | 104 | ฟาร์มสุกรขุนระยอง 2 | Lot3-2 | 157.3 | Solar Car park | 19 | 2026-07-01 | 2026-12-04 | 2025-08-10 | 61.7 | 45.93 | 15.77 | ON_TRACK | ตามแผนงาน |       |
| prj_122 | สุกรตะวันออก | 111 | ฟาร์มสุกรขุนหมอนนาง | Lot3-2 | 157.3 | Solar Car park | 19 | 2026-07-01 | 2027-01-02 | 2025-08-10 | 20.0 | 66.13 | -46.13 | DELAYED | ล่าช้ากว่าแผน |       |
| prj_123 | สุกรตะวันออก | 116 | ฟาร์มสุกรพันธุ์ปราจีนบุรี 1 | Lot3-2 | 157.3 | Solar Car park | 19 | 2026-07-01 | 2027-01-02 | 2025-08-10 | 75.86 | 66.13 | 9.73 | ON_TRACK | ตามแผนงาน |       |
| prj_124 | ชำแหละไก่ | 211 | โรงงานชำแหละไก่ลำปาง-2 | Lot3-2 | 157.3 | Solar Car park | 19 | 2026-04-18 | 2026-09-06 | 2026-03-09 | 89.5 | 98.9 | -9.4 | SLIGHT_DELAY | ล่าช้าเล็กน้อย |       |
| prj_125 | สุกรตะวันออก | 102 | ฟาร์มสุกรขุนจันทบุรี 2 | Lot3-2 | 214.5 | Solar Car park | 19 | 2026-06-15 | 2027-01-01 | 2025-08-10 | 65.97 | 68.8 | -2.83 | SLIGHT_DELAY | ล่าช้าเล็กน้อย |       |
| prj_126 | ชำแหละสุกร | 210 | โรงชำแหละสุกรกาญจนบุรี | Lot3-2 | 214.5 | Solar Car park | 19 | 2026-04-01 | 2026-09-04 | 2026-02-09 | 87.23 | 98.17 | -10.94 | DELAYED | ล่าช้ากว่าแผน |       |
| prj_127 | แปรรูปไก่ | 205 | โรงงานแปรรูปเนื้อไก่สระบุรี | Lot3-2 | 642.4 | Solar Car park N type | 20 | 2026-07-01 | 2026-11-19 | 2026-04-26 | 71.47 | 68.17 | 3.3 | ON_TRACK | ตามแผนงาน |       |
| prj_128 | อาหารสัตว์ | 217 | โรงงานอาหารสัตว์บกธารเกษม | Lot3-2 | 949.0 | Solar Car park | 41 | 2026-07-01 | 2026-12-03 | 2026-04-20 | 19.0 | 45.7 | -26.7 | DELAYED | ล่าช้ากว่าแผน |       |
| prj_129 | สัตว์น้ำ |  | ฟาร์มแม่กลอง1 | LOT4 | 797.5 | Solar Car park | 41 | 2026-09-01 | 2027-02-03 | 2026-08-15 | 5.9 | 0.0 | 5.9 | ON_TRACK | ตามแผนงาน | 2026-08-10, 2026-08-17, 2026-08-24, 2026-08-31, 2026-09-07, 2026-09-14, 2026-09-21, 2026-09-28, 2026-10-05, 2026-10-12, 2026-10-19, 2026-10-26, 2026-11-02, 2026-11-09, 2026-11-16, 2026-11-23, 2026-11-30, 2026-12-07, 2026-12-14, 2026-12-21, 2026-12-28, 2027-01-04, 2027-01-11, 2027-01-18, 2027-01-25, 2027-02-01, 2027-02-08 W1 (10/08/26), W2 (17/08/26), W3 (24/08/26), W4 (31/08/26), W5 (07/09/26), W6 (14/09/26), W7 (21/09/26), W8 (28/09/26), W9 (05/10/26), W10 (12/10/26), W11 (19/10/26), W12 (26/10/26), W13 (02/11/26), W14 (09/11/26), W15 (16/11/26), W16 (23/11/26), W17 (30/11/26), W18 (07/12/26), W19 (14/12/26), W20 (21/12/26), W21 (28/12/26), W22 (04/01/27), W23 (11/01/27), W24 (18/01/27), W25 (25/01/27), W26 (01/02/27), W27 (08/02/27) 0.0, 0.0, 0.0, 1.78, 5.22, 9.28, 14.71, 18.83, 22.54, 33.12, 44.06, 55.2, 63.98, 75.1, 78.48, 83.06, 88.08, 89.84, 91.31, 92.38, 93.45, 95.52, 96.76, 98.0, 99.0, 100.0, 100.0 1.67, 4.23, 5.9, 5.9, 5.9, , , , , , , , , , , , , , , , , , , , , ,  0.0, 0.0, 0.0, 1.78, 3.44, 4.06, 5.43, 4.12, 3.72, 10.57, 10.94, 11.14, 8.77, 11.12, 3.38, 4.58, 5.02, 1.77, 1.47, 1.07, 1.07, 2.07, 1.24, 1.24, 1.0, 1.0, 0.0 1.67, 2.57, 1.67, 0.0, 0.0, 0.0, 0.0, 0.0, 0.0, 0.0, 0.0, 0.0, 0.0, 0.0, 0.0, 0.0, 0.0, 0.0, 0.0, 0.0, 0.0, 0.0, 0.0, 0.0, 0.0, 0.0, 0.0 |
| prj_130 | ชำแหละสุกร |  | โรงชำแหละสุกรห้วยส้ม | LOT4 | 309.5 | Solar Car park N type | 20 | 2026-10-01 | 2027-03-05 |  | 0.0 | 0.0 | 0.0 | ON_TRACK | ตามแผนงาน | 2026-09-28, 2026-10-05, 2026-10-12, 2026-10-19, 2026-10-26, 2026-11-02, 2026-11-09, 2026-11-16, 2026-11-23, 2026-11-30, 2026-12-07, 2026-12-14, 2026-12-21, 2026-12-28, 2027-01-04, 2027-01-11, 2027-01-18, 2027-01-25, 2027-02-01, 2027-02-08, 2027-02-15, 2027-02-22, 2027-03-01, 2027-03-08 W1 (28/09/26), W2 (05/10/26), W3 (12/10/26), W4 (19/10/26), W5 (26/10/26), W6 (02/11/26), W7 (09/11/26), W8 (16/11/26), W9 (23/11/26), W10 (30/11/26), W11 (07/12/26), W12 (14/12/26), W13 (21/12/26), W14 (28/12/26), W15 (04/01/27), W16 (11/01/27), W17 (18/01/27), W18 (25/01/27), W19 (01/02/27), W20 (08/02/27), W21 (15/02/27), W22 (22/02/27), W23 (01/03/27), W24 (08/03/27) 1.67, 5.0, 8.95, 14.26, 18.27, 21.88, 32.34, 43.17, 53.8, 63.58, 74.7, 78.48, 81.86, 84.24, 87.38, 89.01, 90.25, 91.49, 93.72, 94.96, 96.2, 97.2, 98.2, 98.2 , , , , , , , , , , , , , , , , , , , , , , ,  1.67, 3.33, 3.95, 5.31, 4.01, 3.61, 10.46, 10.83, 10.63, 9.77, 11.12, 3.78, 3.38, 2.38, 3.13, 1.63, 1.24, 1.24, 2.24, 1.24, 1.24, 1.0, 1.0, 0.0 0.0, 0.0, 0.0, 0.0, 0.0, 0.0, 0.0, 0.0, 0.0, 0.0, 0.0, 0.0, 0.0, 0.0, 0.0, 0.0, 0.0, 0.0, 0.0, 0.0, 0.0, 0.0, 0.0, 0.0 |
| prj_131 | อาหารสัตว์ |  | โรงอาหารสัตว์ท่าเรือ | LOT4 | 841.0 | Solar Car park N type | 41 | 2026-10-01 | 2027-03-05 |  | 0.0 | 0.0 | 0.0 | ON_TRACK | ตามแผนงาน | 2026-09-28, 2026-10-05, 2026-10-12, 2026-10-19, 2026-10-26, 2026-11-02, 2026-11-09, 2026-11-16, 2026-11-23, 2026-11-30, 2026-12-07, 2026-12-14, 2026-12-21, 2026-12-28, 2027-01-04, 2027-01-11, 2027-01-18, 2027-01-25, 2027-02-01, 2027-02-08, 2027-02-15, 2027-02-22, 2027-03-01, 2027-03-08 W1 (28/09/26), W2 (05/10/26), W3 (12/10/26), W4 (19/10/26), W5 (26/10/26), W6 (02/11/26), W7 (09/11/26), W8 (16/11/26), W9 (23/11/26), W10 (30/11/26), W11 (07/12/26), W12 (14/12/26), W13 (21/12/26), W14 (28/12/26), W15 (04/01/27), W16 (11/01/27), W17 (18/01/27), W18 (25/01/27), W19 (01/02/27), W20 (08/02/27), W21 (15/02/27), W22 (22/02/27), W23 (01/03/27), W24 (08/03/27) 1.67, 5.0, 8.95, 14.26, 18.27, 21.88, 32.34, 43.17, 53.8, 63.58, 74.7, 78.48, 83.06, 86.49, 89.18, 90.81, 92.05, 93.29, 95.52, 96.76, 98.0, 99.0, 100.0, 100.0 , , , , , , , , , , , , , , , , , , , , , , ,  1.67, 3.33, 3.95, 5.31, 4.01, 3.61, 10.46, 10.83, 10.63, 9.77, 11.12, 3.78, 4.58, 3.43, 2.68, 1.63, 1.24, 1.24, 2.24, 1.24, 1.24, 1.0, 1.0, 0.0 0.0, 0.0, 0.0, 0.0, 0.0, 0.0, 0.0, 0.0, 0.0, 0.0, 0.0, 0.0, 0.0, 0.0, 0.0, 0.0, 0.0, 0.0, 0.0, 0.0, 0.0, 0.0, 0.0, 0.0 |
| prj_132 | อาหารสัตว์ |  | โรงอาหารสัตว์ปักธงชัย | LOT4 | 957.0 | Solar Car park | 41 | 2026-10-01 | 2027-03-05 |  | 0.0 | 0.0 | 0.0 | ON_TRACK | ตามแผนงาน | 2026-09-28, 2026-10-05, 2026-10-12, 2026-10-19, 2026-10-26, 2026-11-02, 2026-11-09, 2026-11-16, 2026-11-23, 2026-11-30, 2026-12-07, 2026-12-14, 2026-12-21, 2026-12-28, 2027-01-04, 2027-01-11, 2027-01-18, 2027-01-25, 2027-02-01, 2027-02-08, 2027-02-15, 2027-02-22, 2027-03-01, 2027-03-08 W1 (28/09/26), W2 (05/10/26), W3 (12/10/26), W4 (19/10/26), W5 (26/10/26), W6 (02/11/26), W7 (09/11/26), W8 (16/11/26), W9 (23/11/26), W10 (30/11/26), W11 (07/12/26), W12 (14/12/26), W13 (21/12/26), W14 (28/12/26), W15 (04/01/27), W16 (11/01/27), W17 (18/01/27), W18 (25/01/27), W19 (01/02/27), W20 (08/02/27), W21 (15/02/27), W22 (22/02/27), W23 (01/03/27), W24 (08/03/27) 1.67, 5.0, 8.95, 14.26, 18.27, 21.88, 32.34, 43.17, 53.8, 63.58, 74.7, 78.48, 83.06, 86.49, 89.18, 90.81, 92.05, 93.29, 95.52, 96.76, 98.0, 99.0, 100.0, 100.0 , , , , , , , , , , , , , , , , , , , , , , ,  1.67, 3.33, 3.95, 5.31, 4.01, 3.61, 10.46, 10.83, 10.63, 9.77, 11.12, 3.78, 4.58, 3.43, 2.68, 1.63, 1.24, 1.24, 2.24, 1.24, 1.24, 1.0, 1.0, 0.0 0.0, 0.0, 0.0, 0.0, 0.0, 0.0, 0.0, 0.0, 0.0, 0.0, 0.0, 0.0, 0.0, 0.0, 0.0, 0.0, 0.0, 0.0, 0.0, 0.0, 0.0, 0.0, 0.0, 0.0 |
| prj_133 | สุกร |  | ฟาร์มสุกรศิลาทิพย์ | LOT4 | 377.0 | Solar Car park | 20 | 2026-10-01 | 2027-03-05 |  | 0.0 | 0.0 | 0.0 | ON_TRACK | ตามแผนงาน | 2026-09-28, 2026-10-05, 2026-10-12, 2026-10-19, 2026-10-26, 2026-11-02, 2026-11-09, 2026-11-16, 2026-11-23, 2026-11-30, 2026-12-07, 2026-12-14, 2026-12-21, 2026-12-28, 2027-01-04, 2027-01-11, 2027-01-18, 2027-01-25, 2027-02-01, 2027-02-08, 2027-02-15, 2027-02-22, 2027-03-01, 2027-03-08 W1 (28/09/26), W2 (05/10/26), W3 (12/10/26), W4 (19/10/26), W5 (26/10/26), W6 (02/11/26), W7 (09/11/26), W8 (16/11/26), W9 (23/11/26), W10 (30/11/26), W11 (07/12/26), W12 (14/12/26), W13 (21/12/26), W14 (28/12/26), W15 (04/01/27), W16 (11/01/27), W17 (18/01/27), W18 (25/01/27), W19 (01/02/27), W20 (08/02/27), W21 (15/02/27), W22 (22/02/27), W23 (01/03/27), W24 (08/03/27) 1.67, 5.0, 8.95, 14.26, 18.27, 21.88, 32.34, 43.17, 53.8, 63.58, 74.7, 78.48, 81.86, 84.24, 87.38, 89.01, 90.25, 91.49, 93.72, 94.96, 96.2, 97.2, 98.2, 98.2 , , , , , , , , , , , , , , , , , , , , , , ,  1.67, 3.33, 3.95, 5.31, 4.01, 3.61, 10.46, 10.83, 10.63, 9.77, 11.12, 3.78, 3.38, 2.38, 3.13, 1.63, 1.24, 1.24, 2.24, 1.24, 1.24, 1.0, 1.0, 0.0 0.0, 0.0, 0.0, 0.0, 0.0, 0.0, 0.0, 0.0, 0.0, 0.0, 0.0, 0.0, 0.0, 0.0, 0.0, 0.0, 0.0, 0.0, 0.0, 0.0, 0.0, 0.0, 0.0, 0.0 |
| prj_134 | ไก่กระทง |  | ฟาร์มไก่กระทงโพธ์งาม | LOT4 | 478.5 | Solar Car park | 41 | 2026-10-01 | 2027-03-05 |  | 0.0 | 0.0 | 0.0 | ON_TRACK | ตามแผนงาน | 2026-09-28, 2026-10-05, 2026-10-12, 2026-10-19, 2026-10-26, 2026-11-02, 2026-11-09, 2026-11-16, 2026-11-23, 2026-11-30, 2026-12-07, 2026-12-14, 2026-12-21, 2026-12-28, 2027-01-04, 2027-01-11, 2027-01-18, 2027-01-25, 2027-02-01, 2027-02-08, 2027-02-15, 2027-02-22, 2027-03-01, 2027-03-08 W1 (28/09/26), W2 (05/10/26), W3 (12/10/26), W4 (19/10/26), W5 (26/10/26), W6 (02/11/26), W7 (09/11/26), W8 (16/11/26), W9 (23/11/26), W10 (30/11/26), W11 (07/12/26), W12 (14/12/26), W13 (21/12/26), W14 (28/12/26), W15 (04/01/27), W16 (11/01/27), W17 (18/01/27), W18 (25/01/27), W19 (01/02/27), W20 (08/02/27), W21 (15/02/27), W22 (22/02/27), W23 (01/03/27), W24 (08/03/27) 1.67, 5.0, 8.95, 14.26, 18.27, 21.88, 32.34, 43.17, 53.8, 63.58, 74.7, 78.48, 83.06, 86.49, 89.18, 90.81, 92.05, 93.29, 95.52, 96.76, 98.0, 99.0, 100.0, 100.0 , , , , , , , , , , , , , , , , , , , , , , ,  1.67, 3.33, 3.95, 5.31, 4.01, 3.61, 10.46, 10.83, 10.63, 9.77, 11.12, 3.78, 4.58, 3.43, 2.68, 1.63, 1.24, 1.24, 2.24, 1.24, 1.24, 1.0, 1.0, 0.0 0.0, 0.0, 0.0, 0.0, 0.0, 0.0, 0.0, 0.0, 0.0, 0.0, 0.0, 0.0, 0.0, 0.0, 0.0, 0.0, 0.0, 0.0, 0.0, 0.0, 0.0, 0.0, 0.0, 0.0 |
| prj_135 | แปรรูปสัตว์น้ำ |  | โรงงานแปรรูปสัตว์น้ำแกลง | LOT4 | 300.1 | Solar Car park | 20 | 2026-10-01 | 2027-03-05 | 2026-09-01 | 7.0 | 0.0 | 7.0 | ON_TRACK | ตามแผนงาน | 2026-08-31, 2026-09-07, 2026-09-14, 2026-09-21, 2026-09-28, 2026-10-05, 2026-10-12, 2026-10-19, 2026-10-26, 2026-11-02, 2026-11-09, 2026-11-16, 2026-11-23, 2026-11-30, 2026-12-07, 2026-12-14, 2026-12-21, 2026-12-28, 2027-01-04, 2027-01-11, 2027-01-18, 2027-01-25, 2027-02-01, 2027-02-08, 2027-02-15, 2027-02-22, 2027-03-01, 2027-03-08 W1 (31/08/26), W2 (07/09/26), W3 (14/09/26), W4 (21/09/26), W5 (28/09/26), W6 (05/10/26), W7 (12/10/26), W8 (19/10/26), W9 (26/10/26), W10 (02/11/26), W11 (09/11/26), W12 (16/11/26), W13 (23/11/26), W14 (30/11/26), W15 (07/12/26), W16 (14/12/26), W17 (21/12/26), W18 (28/12/26), W19 (04/01/27), W20 (11/01/27), W21 (18/01/27), W22 (25/01/27), W23 (01/02/27), W24 (08/02/27), W25 (15/02/27), W26 (22/02/27), W27 (01/03/27), W28 (08/03/27) 0.0, 0.0, 0.0, 0.0, 1.67, 5.0, 8.95, 14.26, 18.27, 21.88, 32.34, 43.17, 53.8, 63.58, 74.7, 78.48, 81.86, 84.24, 87.38, 89.01, 90.25, 91.49, 93.72, 94.96, 96.2, 97.2, 98.2, 98.2 7.0, 7.0, , , , , , , , , , , , , , , , , , , , , , , , , ,  0.0, 0.0, 0.0, 0.0, 1.67, 3.33, 3.95, 5.31, 4.01, 3.61, 10.46, 10.83, 10.63, 9.77, 11.12, 3.78, 3.38, 2.38, 3.13, 1.63, 1.24, 1.24, 2.24, 1.24, 1.24, 1.0, 1.0, 0.0 7.0, 0.0, 0.0, 0.0, 0.0, 0.0, 0.0, 0.0, 0.0, 0.0, 0.0, 0.0, 0.0, 0.0, 0.0, 0.0, 0.0, 0.0, 0.0, 0.0, 0.0, 0.0, 0.0, 0.0, 0.0, 0.0, 0.0, 0.0 |
| prj_136 | สุกร |  | ฟาร์มสุกรพนัสนิคม | LOT4 | 159.5 | Solar Car park | 19 | 2026-10-01 | 2027-03-05 |  | 0.0 | 0.0 | 0.0 | ON_TRACK | ตามแผนงาน | 2026-09-28, 2026-10-05, 2026-10-12, 2026-10-19, 2026-10-26, 2026-11-02, 2026-11-09, 2026-11-16, 2026-11-23, 2026-11-30, 2026-12-07, 2026-12-14, 2026-12-21, 2026-12-28, 2027-01-04, 2027-01-11, 2027-01-18, 2027-01-25, 2027-02-01, 2027-02-08, 2027-02-15, 2027-02-22, 2027-03-01, 2027-03-08 W1 (28/09/26), W2 (05/10/26), W3 (12/10/26), W4 (19/10/26), W5 (26/10/26), W6 (02/11/26), W7 (09/11/26), W8 (16/11/26), W9 (23/11/26), W10 (30/11/26), W11 (07/12/26), W12 (14/12/26), W13 (21/12/26), W14 (28/12/26), W15 (04/01/27), W16 (11/01/27), W17 (18/01/27), W18 (25/01/27), W19 (01/02/27), W20 (08/02/27), W21 (15/02/27), W22 (22/02/27), W23 (01/03/27), W24 (08/03/27) 1.67, 5.0, 8.95, 14.32, 18.38, 22.04, 32.56, 43.38, 53.99, 63.75, 74.86, 78.62, 81.99, 84.36, 87.47, 89.09, 90.31, 91.53, 93.76, 94.98, 96.2, 97.2, 98.2, 98.2 , , , , , , , , , , , , , , , , , , , , , , ,  1.67, 3.33, 3.95, 5.37, 4.06, 3.66, 10.52, 10.82, 10.62, 9.76, 11.11, 3.77, 3.37, 2.37, 3.12, 1.62, 1.22, 1.22, 2.22, 1.22, 1.22, 1.0, 1.0, 0.0 0.0, 0.0, 0.0, 0.0, 0.0, 0.0, 0.0, 0.0, 0.0, 0.0, 0.0, 0.0, 0.0, 0.0, 0.0, 0.0, 0.0, 0.0, 0.0, 0.0, 0.0, 0.0, 0.0, 0.0 |
| prj_137 | อสร. |  | อสร.หนองจอก | LOT4 | 829.4 | Solar Rooftop | 3 | 2026-10-01 | 2027-03-05 | 2026-09-01 | 3.22 | 0.0 | 3.22 | ON_TRACK | ตามแผนงาน | 2026-08-31, 2026-09-07, 2026-09-14, 2026-09-21, 2026-09-28, 2026-10-05, 2026-10-12, 2026-10-19, 2026-10-26, 2026-11-02, 2026-11-09, 2026-11-16, 2026-11-23, 2026-11-30, 2026-12-07, 2026-12-14, 2026-12-21, 2026-12-28, 2027-01-04, 2027-01-11, 2027-01-18, 2027-01-25, 2027-02-01, 2027-02-08, 2027-02-15, 2027-02-22, 2027-03-01, 2027-03-08 W1 (31/08/26), W2 (07/09/26), W3 (14/09/26), W4 (21/09/26), W5 (28/09/26), W6 (05/10/26), W7 (12/10/26), W8 (19/10/26), W9 (26/10/26), W10 (02/11/26), W11 (09/11/26), W12 (16/11/26), W13 (23/11/26), W14 (30/11/26), W15 (07/12/26), W16 (14/12/26), W17 (21/12/26), W18 (28/12/26), W19 (04/01/27), W20 (11/01/27), W21 (18/01/27), W22 (25/01/27), W23 (01/02/27), W24 (08/02/27), W25 (15/02/27), W26 (22/02/27), W27 (01/03/27), W28 (08/03/27) 0.0, 0.0, 0.0, 0.0, 1.33, 4.33, 7.75, 12.61, 16.16, 19.51, 29.0, 38.85, 48.71, 60.31, 72.65, 75.92, 78.59, 81.15, 84.77, 86.29, 87.47, 88.65, 90.83, 92.02, 93.2, 94.2, 95.2, 95.2 2.04, 2.04, , , , , , , , , , , , , , , , , , , , , , , , , ,  0.0, 0.0, 0.0, 0.0, 1.33, 3.0, 3.41, 4.86, 3.55, 3.35, 9.49, 9.86, 9.86, 11.6, 12.35, 3.27, 2.67, 2.57, 3.62, 1.52, 1.18, 1.18, 2.18, 1.18, 1.18, 1.0, 1.0, 0.0 2.04, 0.0, 0.0, 0.0, 0.0, 0.0, 0.0, 0.0, 0.0, 0.0, 0.0, 0.0, 0.0, 0.0, 0.0, 0.0, 0.0, 0.0, 0.0, 0.0, 0.0, 0.0, 0.0, 0.0, 0.0, 0.0, 0.0, 0.0 |
